# HCP EM 2.0 project plan 061417

Schedule from MS Project, 2017-01-01 to 2018-03-19, A marks actual dates.
Bristol-Myers Squibb Company

## Calendars

- Standard: Mon-Fri 08:00-12:00, 13:00-17:00; Sat-Sun off.

## Resources

| Resource |
| --- |
| GPO |
| IT |
| Veeva Dev |
| Shaheen |
| Fabien |
| Michelle F. |
| Waiman |
| Lynn K |
| Pat S. |
| Daniel B. |
| Maribel R. |
| Murugesh |
| Market |
| Diane O. |
| Rosa R. |
| Daniel B. |
| Marie C. B. |
| K |
| Marie C. Gonzalez |
| toni Prescott |
| 117ss-25 |
| ZZ Security Resource_BMS.Commercial.WWC.HCP and Transparency |

## Schedule

| ID | WBS | Task | Type | Duration | Start | Finish | Predecessors | Complete | Remaining | Total slack | Constraint | Resources | Work | Actual work | Text4 |
| --- | --- | --- | --- | --- | --- | --- | --- | --- | --- | --- | --- | --- | --- | --- | --- |
| 1 | 1 | Start | milestone | 0d | 2017-01-01 A | 2017-01-01 A | 4SS | 100% |  |  |  |  |  |  |  |
| 2 | 2 | Implementation | milestone | 0d | 2017-06-14 | 2017-06-14 | 56 |  |  | 0d |  |  |  |  |  |
| 3 | 3 | Finish | milestone | 0d | 2018-03-19 | 2018-03-19 | 685 |  |  | 0d |  |  |  |  |  |
| 4 | 4 | **HCP Event Management Implementation project Plan** |  | 209d? | 2017-01-17 A | 2017-11-03 |  | 31% | 143.86d? | 0d |  |  | 38448h | 11967.8h |  |
| 5 | 4.1 | **Wave 1 - Core Activities** |  | 119d? | 2017-01-17 A | 2017-06-30 |  | 91% | 11.04d? | 90d |  |  | 6264h | 5228.12h |  |
| 6 | 4.1.1 | **Planning & Analysis** |  | 59d | 2017-01-17 A | 2017-04-07 |  | 99% | 0.74d | 0d |  |  | 2264h | 2264h |  |
| 7 | 4.1.1.1 | Conduct workshops w. IT to define requirements |  | 31d | 2017-01-17 A | 2017-02-28 |  | 97% | 1d | 0d | start no earlier than 2017-01-17 | GPO; IT; Veeva Dev | 720h | 720h |  |
| 8 | 4.1.1.2 | Develop Prototype for demo |  | 31d | 2017-01-17 A | 2017-02-28 | 7SS | 97% | 1d | 0d |  | Veeva Dev | 240h | 240h |  |
| 9 | 4.1.1.3 | Demo prototype to EU markets |  | 3d | 2017-03-01 A | 2017-03-03 A | 8 | 100% |  |  |  | GPO | 24h | 24h |  |
| 10 | 4.1.1.4 | **Finalize Requirements** |  | 20d | 2017-03-06 A | 2017-03-31 A | 9 | 100% |  |  |  |  | 480h | 480h |  |
| 11 | 4.1.1.4.1 | Veeva Requirements |  | 20d | 2017-03-06 A | 2017-03-31 A | 9 | 100% |  |  |  | Shaheen | 160h | 160h |  |
| 12 | 4.1.1.4.2 | Interface Requirements (StarCite, Concur, SAP) |  | 20d | 2017-03-06 A | 2017-03-31 A | 9 | 100% |  |  |  | Fabien; Michelle F. | 320h | 320h |  |
| 13 | 4.1.1.5 | Requirements Signed and Approved |  | 5d | 2017-04-03 A | 2017-04-07 A | 10 | 100% |  |  |  | GPO | 40h | 40h |  |
| 14 | 4.1.1.6 | Develop SCAR |  | 25d | 2017-02-21 A | 2017-03-27 A |  | 100% |  |  | start no earlier than 2017-02-21 | GPO; IT | 400h | 400h | [Type Column Name] |
| 15 | 4.1.1.7 | Obtain SCAR approval |  | 5d | 2017-03-28 A | 2017-04-03 A | 14 | 100% |  |  |  | IT | 40h | 40h |  |
| 16 | 4.1.1.8 | Develop roll out schedule and identify wave 1 markets |  | 20d | 2017-03-06 A | 2017-03-31 A |  | 100% |  |  | start no earlier than 2017-03-06 | GPO; IT | 320h | 320h |  |
| 17 | 4.1.1.9 | Complete detailed project plan for wave 1 implementation | milestone | 0d | 2017-04-07 A | 2017-04-07 A |  | 100% |  |  | start no earlier than 2017-03-31 | IT; Waiman |  |  | [Type Column Name] |
| 18 | 4.1.2 | **System design / build** |  | 67d? | 2017-03-06 A | 2017-06-06 |  | 84% | 11.01d? | 108d |  |  | 1464h | 844.12h |  |
| 19 | 4.1.2.1 | Complete detailed Design |  | 20d | 2017-03-06 A | 2017-03-31 A | 11SS | 100% |  |  | start no earlier than 2013-01-04 | Veeva Dev | 160h | 160h |  |
| 20 | 4.1.2.2 | Detailed design sign off |  | 5d | 2017-04-03 A | 2017-04-07 | 19 | 75% | 1.25d | 150d | start no earlier than 2016-01-11 | IT | 40h | 30h |  |
| 21 | 4.1.2.3 | **Build** |  | 32d | 2017-03-20 A | 2017-05-02 |  | 99% | 0d | 0d |  | Veeva Dev; IT | 1136h | 654.12h |  |
| 22 | 4.1.2.3.1 | EU Full Refresh |  | 5d | 2017-04-05 A | 2017-04-11 A | 19FS+2d | 100% |  |  |  | IT | 40h | 40h |  |
| 23 | 4.1.2.3.2 | EU 2.0 deployed in EU Full |  | 5d | 2017-04-10 A | 2017-04-14 A | 22SS+3d | 100% |  |  |  | IT | 40h | 40h |  |
| 24 | 4.1.2.3.3 | Deliver Germany Delta Interface - Not Required |  | 30d | 2017-03-20 A | 2017-04-28 A |  | 100% |  |  | start no earlier than 2017-03-20 | IT | 240h | 240h |  |

| ID | WBS | Task | Type | Duration | Start | Finish | Predecessors | Complete | Remaining | Total slack | Free slack | Constraint | Resources | Work | Actual work |
| --- | --- | --- | --- | --- | --- | --- | --- | --- | --- | --- | --- | --- | --- | --- | --- |
| 25 | 4.1.2.3.4 | **Deliver EM 2.0 Interfaces** |  | 14d | 2017-04-13 A | 2017-05-02 | 23SS+3d | 99% | 0d | 0d |  |  | IT | 304h | 240h |
| 26 | 4.1.2.3.4.1 | Phase 1 - Starcite, SAP |  | 10d | 2017-04-13 A | 2017-04-26 A |  | 100% |  |  |  |  | IT | 80h | 80h |
| 27 | 4.1.2.3.4.2 | Phase 2 - Starcite, Concur, Preferences, User PS |  | 14d | 2017-04-13 A | 2017-05-02 A |  | 100% |  |  |  |  | IT | 112h | 112h |
| 28 | 4.1.2.4 | **Build - 2** |  | 32d? | 2017-04-24 | 2017-06-06 |  |  |  | 108d |  |  |  | 128h |  |
| 29 | 4.1.2.4.1 | **Develop Automated Payment functionality** |  | 13d? | 2017-04-24 | 2017-05-10 |  |  |  | 127d |  |  |  | 104h |  |
| 30 | 4.1.2.4.1.1 | Provide Business requirements to IT |  | 10d | 2017-04-24 | 2017-05-05 |  |  |  | 127d | 0d | start no earlier than 2017-04-24 | Lynn K | 80h |  |
| 31 | 4.1.2.4.1.2 | Design solution |  | 1d? | 2017-05-08 | 2017-05-08 | 30 |  |  | 127d | 0d |  | IT | 8h |  |
| 32 | 4.1.2.4.1.3 | Build solution |  | 1d? | 2017-05-09 | 2017-05-09 | 31 |  |  | 127d | 0d |  | IT | 8h |  |
| 33 | 4.1.2.4.1.4 | Test |  | 1d? | 2017-05-10 | 2017-05-10 | 32 |  |  | 127d |  |  | IT | 8h |  |
| 34 | 4.1.2.4.2 | **Develop Approved Email functionality** |  | 2d? | 2017-06-05 | 2017-06-06 |  |  |  | 108d |  |  |  | 24h |  |
| 35 | 4.1.2.4.2.1 | identify markets that can implement this feature |  | 1d? | 2017-06-05 | 2017-06-05 |  |  |  | 108d | 0d | start no earlier than 2017-06-05 | IT | 8h |  |
| 36 | 4.1.2.4.2.2 | identify information required to implement |  | 1d? | 2017-06-06 | 2017-06-06 | 35 |  |  | 108d |  |  | IT | 8h |  |
| 37 | 4.1.2.4.2.3 | Develop task list / schedule |  | 1d? | 2017-06-06 | 2017-06-06 | 35 |  |  | 108d |  |  | Waiman | 8h |  |
| 38 | 4.1.3 | **System Testing** |  | 59d | 2017-03-20 A | 2017-06-08 |  | 98% | 1.21d | 106d |  |  |  | 840h | 808h |
| 39 | 4.1.3.1 | **Test plan and Use case scenarios** |  | 20d | 2017-03-20 A | 2017-04-14 A | 10FS-10d | 100% |  |  |  |  | Pat S. | 320h | 320h |
| 40 | 4.1.3.1.1 | Develop SIT test plan and use case scenarios |  | 20d | 2017-03-20 A | 2017-04-14 A |  | 100% |  |  |  |  | Pat S. | 160h | 160h |
| 41 | 4.1.3.2 | **EM 1.x Testing** |  | 35d | 2017-04-17 A | 2017-06-02 A |  | 100% |  |  |  |  |  | 304h | 304h |
| 42 | 4.1.3.2.1 | Unit test setting record type |  | 3d | 2017-04-17 A | 2017-04-19 A | 23, 39 | 100% |  |  |  | start no earlier than 2016-02-22 | IT | 24h | 24h |
| 43 | 4.1.3.2.2 | Execute Regression Testing for EM 1.x |  | 35d | 2017-04-17 A | 2017-06-02 A | 23, 40 | 100% |  |  |  | start no earlier than 2016-03-23 | IT | 280h | 280h |
| 44 | 4.1.3.3 | Execute EM 2.0 SIT testing (incl. CRM regression) |  | 23d | 2017-05-03 A | 2017-06-02 A | 25 | 100% |  |  |  |  | IT | 184h | 184h |
| 45 | 4.1.3.4 | SIT testing complete | milestone | 0d | 2017-06-02 A | 2017-06-02 A | 44 | 100% |  |  |  |  | IT |  |  |
| 46 | 4.1.3.5 | Complete SIT test Summary Report |  | 3d | 2017-06-05 A | 2017-06-07 | 44 | 75% | 0.75d | 106d | 0d | start no earlier than 2016-04-08 | IT | 24h |  |
| 47 | 4.1.3.6 | Test Summary Report sign off |  | 1d | 2017-06-08 | 2017-06-08 | 46 |  |  | 106d |  |  | IT | 8h |  |
| 48 | 4.1.4 | **Core UFT** |  | 11d | 2017-04-17 A | 2017-05-01 A |  | 100% |  |  |  |  |  | 88h | 88h |
| 49 | 4.1.4.1 | Deliver 2 core end-to-end scripts (non-approval) |  | 10d | 2017-04-17 A | 2017-04-28 A |  | 100% |  |  |  | start no earlier than 2017-04-17 | Shaheen | 80h | 80h |
| 50 | 4.1.4.2 | Demo Scripts to GPO Leads |  | 1d | 2017-05-01 A | 2017-05-01 A | 49 | 100% |  |  |  | start no earlier than 2017-05-01 | Shaheen | 8h | 8h |

Notes:
- 49: one with PO / Ipad and Browser / one with manual entry

| ID | WBS | Task | Type | Duration | Start | Finish | Predecessors | Complete | Remaining | Total slack | Constraint | Resources | Work | Actual work | Text1 |
| --- | --- | --- | --- | --- | --- | --- | --- | --- | --- | --- | --- | --- | --- | --- | --- |
| 51 | 4.1.5 | **EU Org Go Live Activities** |  | 8d | 2017-06-05 A | 2017-06-14 |  | 84% | 1.29d | 102d |  |  | 72h | 48h |  |
| 52 | 4.1.5.1 | PTP activities |  | 5d | 2017-06-05 A | 2017-06-09 A | 45 | 100% |  |  |  |  |  |  |  |
| 53 | 4.1.5.2 | IDL |  | 3d | 2017-06-12 A | 2017-06-14 A | 52 | 100% |  |  |  | IT | 24h | 24h |  |
| 54 | 4.1.5.3 | Migrate to Production |  | 3d | 2017-06-12 A | 2017-06-14 A | 52 | 100% |  |  |  | IT | 24h | 24h |  |
| 55 | 4.1.5.4 | Service Desk Support Training |  | 3d | 2017-06-12 A | 2017-06-14 | 52 | 25% | 2.25d | 102d |  | Daniel B. | 24h |  |  |
| 56 | 4.1.6 | System - Live Wave1 | milestone | 0d | 2017-06-14 A | 2017-06-14 A | 54 | 100% |  |  |  |  |  |  | Y |
| 57 | 4.1.7 | **Service Desk Support** |  | 39d | 2017-05-05 A | 2017-06-29 A |  | 100% |  |  |  |  |  |  |  |
| 58 | 4.1.7.1 | Develop Support Plan |  | 39d | 2017-05-05 A | 2017-06-29 A |  | 100% |  |  | start no earlier than 2017-05-05 | Waiman |  |  |  |
| 59 | 4.1.8 | **Training** |  | 45d | 2017-04-10 A | 2017-06-09 A |  | 100% |  |  |  | Maribel R. | 1016h | 1016h |  |
| 60 | 4.1.8.1 | **Training System Readiness** |  | 35d | 2017-04-10 A | 2017-05-26 A | 6 | 100% |  |  |  | Maribel R. | 296h | 296h |  |
| 61 | 4.1.8.1.1 | Confirm Training system strategy |  | 2d | 2017-04-10 A | 2017-04-11 A |  | 100% |  |  |  | Maribel R.; IT | 32h | 32h |  |
| 62 | 4.1.8.1.2 | Training Environment Prep |  | 23d | 2017-04-12 A | 2017-05-12 A | 61 | 100% |  |  |  | Murugesh | 184h | 184h |  |
| 63 | 4.1.8.1.3 | Training System Ready to be used | milestone | 0d | 2017-05-12 A | 2017-05-12 A | 62 | 100% |  |  | start no earlier than 2016-07-05 | IT |  |  |  |
| 64 | 4.1.8.1.4 | **Stage training data** |  | 10d | 2017-05-15 A | 2017-05-26 A |  | 100% |  |  |  |  | 80h | 80h |  |
| 65 | 4.1.8.1.4.1 | Training System Create/Stage Training Data |  | 5d | 2017-05-15 A | 2017-05-19 A | 63 | 100% |  |  |  | Maribel R. | 40h | 40h |  |
| 66 | 4.1.8.1.4.2 | Validate training data |  | 5d | 2017-05-22 A | 2017-05-26 A | 65 | 100% |  |  |  | Maribel R. | 40h | 40h |  |
| 67 | 4.1.8.2 | **Training Courseware Development** |  | 30d | 2017-04-10 A | 2017-05-19 A | 9 | 100% |  |  |  |  | 560h | 560h |  |
| 68 | 4.1.8.2.1 | **Finalize training courseware for EM 2.0 - Non Approval** |  | 20d | 2017-04-10 A | 2017-05-05 A |  | 100% |  |  |  | Maribel R. | 560h | 560h |  |
| 69 | 4.1.8.2.1.1 | Quick Reference Guides |  | 10d | 2017-04-17 A | 2017-04-28 A |  | 100% |  |  | finish no earlier than 2017-04-28 | Maribel R. | 80h | 80h |  |
| 70 | 4.1.8.2.1.2 | Event Owner Browser |  | 15d | 2017-04-10 A | 2017-04-28 A |  | 100% |  |  | start no earlier than 2017-04-10 | Maribel R. | 120h | 120h |  |
| 71 | 4.1.8.2.1.3 | Service Coordinator |  | 15d | 2017-04-10 A | 2017-04-28 A |  | 100% |  |  | finish no earlier than 2017-04-28 | Maribel R. | 120h | 120h |  |
| 72 | 4.1.8.2.1.4 | Event Owner Ipad |  | 10d | 2017-04-24 A | 2017-05-05 A |  | 100% |  |  | start no earlier than 2017-04-24 | Maribel R. | 80h | 80h |  |
| 73 | 4.1.8.2.2 | **Localization - Market to Review training courseware** |  | 0d | 2017-05-19 A | 2017-05-19 A |  | 100% |  |  |  | Market; Maribel R. |  |  |  |
| 74 | 4.1.8.2.2.1 | UK/I Complete | milestone | 0d | 2017-05-19 A | 2017-05-19 A | 173 | 100% |  |  |  |  |  |  |  |
| 75 | 4.1.8.2.2.2 | Benelux Complete | milestone | 0d | 2017-05-19 A | 2017-05-19 A | 173FF | 100% |  |  | start no earlier than 2017-05-19 |  |  |  |  |
| 76 | 4.1.8.3 | Training Courseware Development Complete - Non-Approval | milestone | 0d | 2017-05-26 A | 2017-05-26 A | 178 | 100% |  |  |  |  |  |  |  |

Notes:
- 69: Will be done by 5/2
- 70: Will be done by 5/2
- 71: Will be done by 5/2

| ID | WBS | Task | Type | Duration | Start | Finish | Predecessors | Complete | Remaining | Total slack | Free slack | Constraint | Resources | Work | Actual work |
| --- | --- | --- | --- | --- | --- | --- | --- | --- | --- | --- | --- | --- | --- | --- | --- |
| 77 | 4.1.8.4 | **Finalize training courseware for EM 2.0 - Approval Path** |  | 10d | 2017-05-29 A | 2017-06-09 A |  | 100% |  |  |  |  | Maribel R. | 160h | 160h |
| 78 | 4.1.8.4.1 | Understand the new approval process (Using Italy as an example) |  | 1d | 2017-05-29 A | 2017-05-29 A |  | 100% |  |  |  | start no earlier than 2017-05-29 | Maribel R. | 8h | 8h |
| 79 | 4.1.8.4.2 | Make necessary updates to the courseware |  | 9d | 2017-05-30 A | 2017-06-09 A | 78 | 100% |  |  |  |  | Maribel R. | 72h | 72h |
| 80 | 4.1.9 | **Tableau Reporting** |  | 65d | 2017-04-03 A | 2017-06-30 |  | 54% | 30d | 90d | 0d |  |  | 520h | 160h |
| 81 | 4.1.9.1 | Develop Report Requirements |  | 20d | 2017-04-03 A | 2017-04-28 A |  | 100% |  |  |  | start no earlier than 2017-04-03 | Lynn K | 160h | 160h |
| 82 | 4.1.9.2 | Design / build Reports |  | 30d | 2017-05-01 A | 2017-06-09 | 81 | 50% | 15d | 90d | 0d |  | IT | 240h |  |
| 83 | 4.1.9.3 | Test reports |  | 15d | 2017-06-12 | 2017-06-30 | 82 |  |  | 90d | 0d |  | IT | 120h |  |
| 84 | 4.1.9.4 | Deliver reports | milestone | 0d | 2017-06-30 | 2017-06-30 | 83 |  |  | 90d |  |  | IT |  |  |
| 85 | 4.2 | **Wave 2A - Core Activities (Nordics)** |  | 41d | 2017-06-26 | 2017-08-21 |  |  |  | 54d |  |  |  | 160h |  |
| 86 | 4.2.1 | System build/ test |  | 10d | 2017-07-17 | 2017-07-28 | 92SS-25d |  |  | 70d |  |  | IT | 80h |  |
| 87 | 4.2.2 | Core UFT Activities |  | 10d | 2017-06-29 | 2017-07-12 | 472SS |  |  | 82d |  |  | Shaheen | 80h |  |
| 88 | 4.2.3 | Core Training activities | milestone | 0d | 2017-06-26 | 2017-06-26 | 92SS-40d |  |  | 95d |  |  | Maribel R. |  |  |
| 89 | 4.2.4 | **IT go live Prep activities** |  | 8d | 2017-08-10 | 2017-08-21 |  |  |  | 42d | 0d |  |  |  |  |
| 90 | 4.2.4.1 | Data Load |  | 5d | 2017-08-10 | 2017-08-16 | 92SS-7d |  |  | 42d | 0d |  |  |  |  |
| 91 | 4.2.4.2 | PTP |  | 3d | 2017-08-17 | 2017-08-21 | 90 |  |  | 42d |  |  |  |  |  |
| 92 | 4.2.5 | Nordics - Go Live | milestone | 0d | 2017-08-21 | 2017-08-21 |  |  |  | 40d | 0d | start no earlier than 2017-08-21 |  |  |  |
| 93 | 4.3 | **Wave 2B - Core Activities (Brazil)** |  | 54d | 2017-05-24 | 2017-08-07 |  |  |  | 64d |  |  |  | 200h |  |
| 94 | 4.3.1 | Set up new Org |  | 10d | 2017-06-12 | 2017-06-23 | 101SS-40d |  |  | 60d | 0d |  | IT | 80h |  |
| 95 | 4.3.2 | System build/ test (incl. EM 1.x regression) |  | 15d | 2017-06-26 | 2017-07-14 | 94 |  |  | 60d | 0d |  | IT | 120h |  |
| 96 | 4.3.3 | Core UFT Activities | milestone | 0d | 2017-06-12 | 2017-06-12 | 551SS |  |  | 105d |  |  | Shaheen |  |  |
| 97 | 4.3.4 | Core Training activities | milestone | 0d | 2017-05-24 | 2017-05-24 | 101SS-53d |  |  | 118d |  |  | Maribel R. |  |  |
| 98 | 4.3.5 | **IT go live Prep activities** |  | 11d | 2017-07-24 | 2017-08-07 |  |  |  | 49d | 0d |  |  |  |  |
| 99 | 4.3.5.1 | Data Load |  | 5d | 2017-07-24 | 2017-07-28 | 101SS-10d |  |  | 49d | 0d |  |  |  |  |
| 100 | 4.3.5.2 | PTP |  | 6d | 2017-07-31 | 2017-08-07 | 99 |  |  | 49d |  |  |  |  |  |
| 101 | 4.3.6 | Brazil - Go Live | milestone | 0d | 2017-08-07 | 2017-08-07 |  |  |  | 29d | 0d | start no earlier than 2017-08-07 |  |  |  |

| ID | WBS | Task | Type | Duration | Start | Finish | Predecessors | Total slack | Free slack | Constraint | Resources | Work |
| --- | --- | --- | --- | --- | --- | --- | --- | --- | --- | --- | --- | --- |
| 102 | 4.4 | **Wave 2C - Core Activities (Spain, Italy, France, CHAT)** |  | 68d | 2017-06-14 | 2017-09-18 |  | 35d |  |  |  | 160h |
| 103 | 4.4.1 | System build/ test |  | 10d | 2017-08-14 | 2017-08-25 | 109SS-25d | 50d |  |  | IT | 80h |
| 104 | 4.4.2 | Core UFT Activities |  | 10d | 2017-07-27 | 2017-08-09 | 315SS | 62d |  |  | Shaheen | 80h |
| 105 | 4.4.3 | Core Training activities | milestone | 0d | 2017-06-14 | 2017-06-14 | 109SS-68d | 35d | 0d |  | Maribel R. |  |
| 106 | 4.4.4 | **IT go live Prep activities** |  | 7d | 2017-09-07 | 2017-09-15 |  | 23d | 0d |  |  |  |
| 107 | 4.4.4.1 | Data Load |  | 5d | 2017-09-07 | 2017-09-13 | 109SS-7d | 23d | 0d |  |  |  |
| 108 | 4.4.4.2 | PTP |  | 2d | 2017-09-14 | 2017-09-15 | 107 | 23d |  |  |  |  |
| 109 | 4.4.5 | Spain, CHAT - Go Live | milestone | 0d | 2017-09-18 | 2017-09-18 |  | 0d |  | start no earlier than 2017-09-18 |  |  |
| 110 | 4.5 | **Wave 2D - Core Activities (Italy)** |  | 68d | 2017-06-21 | 2017-09-25 |  | 2.53d |  |  |  | 136h |
| 111 | 4.5.1 | System Build/Test |  | 10d | 2017-08-14 | 2017-08-25 | 117SS-30d | 25d | 0d |  | IT | 80h |
| 112 | 4.5.2 | Core UFT Activities |  | 10d | 2017-07-25 | 2017-08-07 | 398SS | 64d |  |  |  |  |
| 113 | 4.5.3 | Core Training activities (staging of data…) | milestone | 0d | 2017-06-21 | 2017-06-21 | 117SS-68d | 98d |  |  |  |  |
| 114 | 4.5.4 | **IT go live Prep activities** |  | 7d | 2017-09-14 | 2017-09-22 |  | 30d |  |  |  | 56h |
| 115 | 4.5.4.1 | Data Load |  | 5d | 2017-09-14 | 2017-09-20 | 403 | 30d | 0d |  | IT | 40h |
| 116 | 4.5.4.2 | PTP |  | 2d | 2017-09-21 | 2017-09-22 | 115 | 30d |  |  | IT | 16h |
| 117 | 4.5.5 | Italy - Go Live | milestone | 0d | 2017-09-25 | 2017-09-25 |  | -65.47d | 0d | start no earlier than 2017-09-25 |  |  |
| 118 | 4.6 | **Wave 2E - Core Activities (Canada, Australia)** |  | 63d | 2017-07-19 | 2017-10-16 |  | 15d |  |  |  |  |
| 119 | 4.6.1 | Set up new Org |  | 10d | 2017-08-07 | 2017-08-18 | 126SS-50d | 40d | 0d |  |  |  |
| 120 | 4.6.2 | System build/ test |  | 15d | 2017-08-21 | 2017-09-08 | 119 | 40d |  |  |  |  |
| 121 | 4.6.3 | Core UFT Activities ( incl. UFT script for Approval option) |  | 10d | 2017-08-11 | 2017-08-24 | 630SS | 51d |  |  |  |  |
| 122 | 4.6.4 | Core Training activities | milestone | 0d | 2017-07-19 | 2017-07-19 | 126SS-63d | 78d |  |  |  |  |
| 123 | 4.6.5 | **IT go live Prep activities** |  | 11d | 2017-09-29 | 2017-10-13 | 126SS-11d | 0d |  |  |  |  |
| 124 | 4.6.5.1 | Data Load |  | 5d | 2017-09-29 | 2017-10-05 |  | 0d |  |  |  |  |
| 125 | 4.6.5.2 | PTP |  | 6d | 2017-10-06 | 2017-10-13 | 124 | 0d |  |  |  |  |
| 126 | 4.6.6 | Canada - Go Live | milestone | 0d | 2017-10-16 | 2017-10-16 |  | 0d |  | start no earlier than 2017-10-16 |  |  |

Notes:
- 104: ( incl. UFT script for Approval option)
- 105: ?

| ID | WBS | Task | Type | Duration | Start | Finish | Predecessors | Complete | Remaining | Total slack | Constraint | Resources | Work | Actual work |
| --- | --- | --- | --- | --- | --- | --- | --- | --- | --- | --- | --- | --- | --- | --- |
| 127 | 4.7 | **Market implementation plan** |  | 168d? | 2017-03-15 A | 2017-11-03 |  | 21% | 132.88d? | 0d |  |  | 31528h | 6739.66h |
| 128 | 4.7.1 | **Benelux** |  | 78d? | 2017-04-04 A | 2017-07-21 |  | 82% | 13.94d? | 76d |  |  | 4792h | 3871.6h |
| 129 | 4.7.1.1 | **Market Data Preparation** |  | 44.53d | 2017-04-04 A | 2017-06-05 A |  | 100% |  |  |  |  | 616h | 616h |
| 130 | 4.7.1.1.1 | **Provide starter data for EU full for SIT testing** |  | 14d | 2017-04-04 A | 2017-04-24 A |  | 100% |  |  |  |  | 192h | 192h |
| 131 | 4.7.1.1.1.1 | GPO to provide templates to market | milestone | 0d | 2017-04-04 A | 2017-04-04 A |  | 100% |  |  |  | Diane O.; IT |  |  |
| 132 | 4.7.1.1.1.2 | Deliver populated HCP Pool template |  | 8d | 2017-04-04 A | 2017-04-13 A | 131 | 100% |  |  |  | Rosa R. | 64h | 64h |
| 133 | 4.7.1.1.1.3 | Deliver populated Venue list template |  | 8d | 2017-04-04 A | 2017-04-13 A | 131 | 100% |  |  |  | Rosa R. | 64h | 64h |
| 134 | 4.7.1.1.1.4 | Deliver populated User Definition Template populated and Hierarchy for non-CRM users |  | 8d | 2017-04-04 A | 2017-04-13 A | 131 | 100% |  |  |  | Rosa R. | 64h | 64h |
| 135 | 4.7.1.1.1.5 | GPO provide Sign-in Sheet sample |  | 7d | 2017-04-13 A | 2017-04-21 A |  | 100% |  |  | start no earlier than 2017-04-17 | Rosa R. |  |  |
| 136 | 4.7.1.1.1.6 | Deliver Market Sign-in Sheet(s) & wording for Digital Sign-in | milestone | 0d | 2017-04-24 A | 2017-04-24 A | 135 | 100% |  |  |  |  |  |  |
| 137 | 4.7.1.1.2 | **Provide Business data refresh** |  | 27d | 2017-04-24 A | 2017-05-30 A | 130 | 100% |  |  |  |  | 424h | 424h |
| 138 | 4.7.1.1.2.1 | Deliver populated HCP Pool template - Not required |  | 27d | 2017-04-24 A | 2017-05-30 A |  | 100% |  |  |  | Rosa R. | 112h | 112h |
| 139 | 4.7.1.1.2.2 | Deliver populated Venue list template - Not Required |  | 13d | 2017-04-24 A | 2017-05-29 A |  | 100% |  |  |  | Rosa R. | 104h | 104h |
| 140 | 4.7.1.1.2.3 | Deliver populated User Definition Template populated and Hierarchy for non-CRM users - Not required |  | 13d | 2017-04-24 A | 2017-05-29 A |  | 100% |  |  |  | Rosa R. | 104h | 104h |
| 141 | 4.7.1.1.2.4 | Deliver market Sign-in Sheet(s) & Wording for Digital Sign-in |  | 13d | 2017-04-24 A | 2017-05-29 A |  | 100% |  |  |  | Rosa R. | 104h | 104h |
| 142 | 4.7.1.1.3 | **Deliver production ready business dataset** |  | 0d | 2017-06-05 A | 2017-06-05 A |  | 100% |  |  |  | Rosa R. |  |  |
| 143 | 4.7.1.1.3.1 | Deliver populated HCP Pool template | milestone | 0d | 2017-06-05 A | 2017-06-05 A |  | 100% |  |  | start no earlier than 2017-06-05 | Rosa R. |  |  |
| 144 | 4.7.1.1.3.2 | Deliver populated Venue list template | milestone | 0d | 2017-06-05 A | 2017-06-05 A |  | 100% |  |  | finish no earlier than 2017-06-05 | Rosa R. |  |  |
| 145 | 4.7.1.1.3.3 | Deliver populated User Definition Template populated and Hierarchy for non-CRM users | milestone | 0d | 2017-06-05 A | 2017-06-05 A |  | 100% |  |  | finish no earlier than 2017-06-05 | Rosa R. |  |  |
| 146 | 4.7.1.1.3.4 | Deliver market Sign-in Sheet(s) & Wording for Digital Sign-in | milestone | 0d | 2017-06-05 A | 2017-06-05 A |  | 100% |  |  | finish no earlier than 2017-06-05 | Rosa R. |  |  |
| 147 | 4.7.1.2 | **Planning** |  | 33d | 2017-04-17 A | 2017-05-31 A |  | 100% |  |  |  |  | 304h | 304h |
| 148 | 4.7.1.2.1 | Confirm Market CM & Comm plan |  | 10d | 2017-04-17 A | 2017-04-28 A |  | 100% |  |  | start no earlier than 2017-04-17 | Rosa R. | 80h | 80h |
| 149 | 4.7.1.2.2 | Develop Cutover Plan |  | 28d | 2017-04-24 A | 2017-05-31 A |  | 100% |  |  | finish no earlier than 2017-05-31 | Rosa R. | 224h | 224h |
| 150 | 4.7.1.3 | **HCP Process Confirmation** |  | 19d? | 2017-04-18 A | 2017-05-12 A |  | 100% |  |  |  | Rosa R. | 392h | 392h |
| 151 | 4.7.1.3.1 | Demo of Core tool |  | 4d | 2017-04-18 A | 2017-04-21 A |  | 100% |  |  | start no earlier than 2017-04-22 | Rosa R. |  |  |
| 152 | 4.7.1.3.2 | Market Processes defined / Documented |  | 15d | 2017-04-19 A | 2017-05-09 A | 151 | 100% |  |  | start no earlier than 2017-04-19 | Rosa R.; Market | 240h | 240h |
| 153 | 4.7.1.3.3 | HCP Process Confirmation | milestone | 0d? | 2017-05-12 A | 2017-05-12 A |  | 100% |  |  | must finish on 2017-05-12 | Rosa R. |  |  |

Notes:
- 136: Waiman - I can't fix the timeline
- 140: Ensure BE disclaimer is made available
- 148: Guy is working on CM and Comm plan
- 149: extend to the end of May. include budget (needs ) taskactivities will stay in the tool they started in. New items in new tool.

| ID | WBS | Task | Duration | Start | Finish | Predecessors | Complete | Remaining | Total slack | Constraint | Resources | Work | Actual work |
| --- | --- | --- | --- | --- | --- | --- | --- | --- | --- | --- | --- | --- | --- |
| 154 | 4.7.1.4 | **UFT** | 35d | 2017-04-17 A | 2017-06-02 A |  | 100% |  |  |  |  | 1344h | 1344h |
| 155 | 4.7.1.4.1 | **UFT Preparation** | 25d | 2017-04-17 A | 2017-05-19 A |  | 100% |  |  |  |  | 1176h | 1176h |
| 156 | 4.7.1.4.1.1 | **UFT Logistics** | 8d | 2017-05-08 A | 2017-05-17 A |  | 100% |  |  |  | Rosa R.; Market | 768h | 768h |
| 157 | 4.7.1.4.1.1.1 | Confirm Participants | 8d | 2017-05-08 A | 2017-05-17 A | 168SS-10d | 100% |  |  | start no earlier than 2017-04-10 | Rosa R.; Market | 128h | 128h |
| 158 | 4.7.1.4.1.1.2 | Confirm IT support | 8d | 2017-05-08 A | 2017-05-17 A | 168SS-10d | 100% |  |  | start no earlier than 2017-04-10 | Rosa R.; Market | 128h | 128h |
| 159 | 4.7.1.4.1.1.3 | Confirm location | 8d | 2017-05-08 A | 2017-05-17 A | 168SS-10d | 100% |  |  | start no earlier than 2017-04-10 | Rosa R.; Market | 128h | 128h |
| 160 | 4.7.1.4.1.1.4 | Confirm Hardware | 8d | 2017-05-08 A | 2017-05-17 A | 168SS-10d | 100% |  |  | start no earlier than 2017-04-10 | Rosa R.; Market | 128h | 128h |
| 161 | 4.7.1.4.1.1.5 | Schedule UFT Sessions | 8d | 2017-05-08 A | 2017-05-17 A | 168SS-10d | 100% |  |  | start no earlier than 2017-04-10 | Rosa R.; Market | 128h | 128h |
| 162 | 4.7.1.4.1.2 | Prep UFT Environment (including data prep) | 3d | 2017-04-19 A | 2017-04-21 A |  | 100% |  |  | start no earlier than 2017-04-19 | Michelle F. | 24h | 24h |
| 163 | 4.7.1.4.1.3 | Develop UFT Use case Scenarios | 10d | 2017-04-17 A | 2017-04-28 A |  | 100% |  |  | start no earlier than 2017-04-17 | Rosa R.; Shaheen | 160h | 160h |
| 164 | 4.7.1.4.1.4 | Demo Core Scripts to GPO Leads | 1d | 2017-05-01 A | 2017-05-01 A |  | 100% |  |  | start no earlier than 2017-05-01 | Shaheen | 8h | 8h |
| 165 | 4.7.1.4.1.5 | Demo Core Scripts to Market Leads | 1d | 2017-05-02 A | 2017-05-02 A | 164 | 100% |  |  | start no earlier than 2017-05-02 | Rosa R. | 8h | 8h |
| 166 | 4.7.1.4.1.6 | Test Script Prep | 13d | 2017-05-03 A | 2017-05-19 A | 165 | 100% |  |  | start no earlier than 2017-05-01 | Rosa R.; Market | 208h | 208h |
| 167 | 4.7.1.4.2 | UFT Training (Demo, Tools & UFT process) | 1d | 2017-05-22 A | 2017-05-22 A | 168SS | 100% |  |  |  | Diane O. | 8h | 8h |
| 168 | 4.7.1.4.3 | UFT Execution | 10d | 2017-05-22 A | 2017-06-02 A | 166 | 100% |  |  | start no earlier than 2017-05-22 | Diane O.; Market | 160h | 160h |
| 169 | 4.7.1.5 | **Training** | 62d | 2017-04-10 A | 2017-07-04 |  | 88% | 7.17d | 88d |  |  | 1632h | 1215.6h |
| 170 | 4.7.1.5.1 | Confirm Market Training Plan | 10d | 2017-04-10 A | 2017-04-21 A |  | 100% |  |  | finish no earlier than 2017-04-25 | Rosa R. | 80h | 80h |
| 171 | 4.7.1.5.2 | Determine date for HO training | 5d | 2017-04-12 A | 2017-04-18 A |  | 100% |  |  | start no earlier than 2017-04-12 | Rosa R. | 40h | 40h |
| 172 | 4.7.1.5.3 | Determine date for Field training | 5d | 2017-04-12 A | 2017-04-18 A |  | 100% |  |  | start no earlier than 2017-04-12 | Rosa R. | 40h | 40h |
| 173 | 4.7.1.5.4 | **Localize training materials** | 13d | 2017-05-03 A | 2017-05-19 |  | 99% | 0d | 0d |  | Rosa R.; Maribel R.; Market | 1056h | 822h |
| 174 | 4.7.1.5.4.1 | Quick Reference Guides | 8d | 2017-05-03 A | 2017-05-12 A | 69 | 100% |  |  | start no earlier than 2017-05-03 | Rosa R.; Maribel R.; Market | 192h | 192h |
| 175 | 4.7.1.5.4.2 | Event Owner Browser | 8d | 2017-05-03 A | 2017-05-12 A | 70 | 100% |  |  | start no earlier than 2017-05-03 | Rosa R.; Maribel R.; Market | 192h | 192h |
| 176 | 4.7.1.5.4.3 | Service Coordinator | 5d | 2017-05-08 A | 2017-05-12 A | 71 | 100% |  |  | start no earlier than 2017-05-08 | Rosa R.; Maribel R.; Market | 120h | 120h |
| 177 | 4.7.1.5.4.4 | Event Owner Ipad - Confirmation | 10d | 2017-05-08 A | 2017-05-19 A | 72 | 100% |  |  | start no earlier than 2017-05-08 | Rosa R.; Maribel R.; Market | 240h | 240h |
| 178 | 4.7.1.5.5 | Final updates incorporating localization | 5d | 2017-05-22 A | 2017-05-26 A | 73 | 100% |  |  |  | Maribel R. | 40h | 40h |

Notes:
- 163: Same as task 49
- 168: EMSIM is the environment
- 174: Plan to deliver at 5/19

| ID | WBS | Task | Type | Duration | Start | Finish | Predecessors | Complete | Remaining | Total slack | Free slack | Constraint | Resources | Work | Actual work |
| --- | --- | --- | --- | --- | --- | --- | --- | --- | --- | --- | --- | --- | --- | --- | --- |
| 179 | 4.7.1.5.6 | **Training Scheduling and Logistics** |  | 27d | 2017-04-21 A | 2017-05-30 A |  | 100% |  |  |  |  |  | 80h | 80h |
| 180 | 4.7.1.5.6.1 | Identify trainers |  | 27d | 2017-04-21 A | 2017-05-30 A | 170 | 100% |  |  |  |  | Rosa R. |  |  |
| 181 | 4.7.1.5.6.2 | Finalize # of sessions and participants |  | 5d | 2017-05-08 A | 2017-05-12 A | 170FS+10d | 100% |  |  |  | start no earlier than 2016-05-23 | Rosa R. | 40h | 40h |
| 182 | 4.7.1.5.6.3 | Reserve training rooms |  | 5d | 2017-05-09 A | 2017-05-15 A | 190SS-15d | 100% |  |  |  | start no earlier than 2016-06-13 | Rosa R. | 40h | 40h |
| 183 | 4.7.1.5.6.4 | **Notify participants** |  | 4d | 2017-05-11 A | 2017-05-16 A |  | 100% |  |  |  |  | Daniel B. |  |  |
| 184 | 4.7.1.5.6.4.1 | EMCoE |  | 1d | 2017-05-16 A | 2017-05-16 A | 191SS-10d | 100% |  |  |  |  |  |  |  |
| 185 | 4.7.1.5.6.4.2 | Field users |  | 1d | 2017-05-11 A | 2017-05-11 A | 192SS-20d | 100% |  |  |  |  |  |  |  |
| 186 | 4.7.1.5.6.4.3 | Home Office |  | 1d | 2017-05-11 A | 2017-05-11 A | 192SS-20d | 100% |  |  |  |  |  |  |  |
| 187 | 4.7.1.5.7 | **Training Delivery** |  | 26d | 2017-05-30 A | 2017-07-04 |  | 44% | 14.56d | 88d |  |  |  | 296h | 113.6h |
| 188 | 4.7.1.5.7.1 | Train the Trainer - Not needed |  | 5d | 2017-05-31 A | 2017-06-06 A | 180 | 100% |  |  |  | start no earlier than 2017-05-22 | Maribel R. | 40h | 40h |
| 189 | 4.7.1.5.7.2 | Trainer Prep |  | 5d | 2017-06-07 A | 2017-06-13 A | 188 | 100% |  |  |  |  | Market | 40h | 40h |
| 190 | 4.7.1.5.7.3 | **Deliver User training** |  | 16d | 2017-05-30 A | 2017-06-20 |  | 20% | 12.8d | 88d | 0d |  | Market | 136h | 33.6h |
| 191 | 4.7.1.5.7.3.1 | EMCOE (EO & SC) |  | 1d | 2017-05-30 A | 2017-05-30 A |  | 100% |  |  |  | start no earlier than 2017-05-30 | Diane O. | 8h | 8h |
| 192 | 4.7.1.5.7.3.2 | Being Confirmed SPEC BE : Thu 8-Fri 9/06 |  | 1d | 2017-06-09 | 2017-06-09 |  |  |  | 0d |  | start no earlier than 2017-06-09 |  |  |  |
| 193 | 4.7.1.5.7.3.3 | Being Confirmed ONCO NL : Mon 12- Tue 13/6 |  | 1d | 2017-06-19 | 2017-06-19 |  |  |  | 89d |  | start no earlier than 2017-06-19 |  |  |  |
| 194 | 4.7.1.5.7.3.4 | Being Confirmed ONCO BE Thu 15-Fri 16/6 |  | 1d | 2017-06-12 | 2017-06-12 |  |  |  | 94d |  | start no earlier than 2017-06-12 |  |  |  |
| 195 | 4.7.1.5.7.3.5 | Being Confirmed SPEC NL : Thur 22-Fri 23/6 |  | 1d | 2017-06-20 | 2017-06-20 |  |  |  | 88d |  | start no earlier than 2017-06-20 |  |  |  |
| 196 | 4.7.1.5.7.4 | Training Complete | milestone | 0d | 2017-06-20 | 2017-06-20 | 190 |  |  | 88d | 0d |  |  |  |  |
| 197 | 4.7.1.5.7.5 | Training sustainment |  | 10d | 2017-06-21 | 2017-07-04 | 196 |  |  | 88d |  |  | Market | 80h |  |
| 198 | 4.7.1.6 | **Market Readiness** |  | 32d | 2017-05-18 | 2017-06-30 |  |  |  | 90d |  |  |  | 288h |  |
| 199 | 4.7.1.6.1 | Logistics provider - change management |  | 18d | 2017-05-18 | 2017-06-12 | 56FS-20d |  |  | 104d |  |  | Marie C. Gonzalez | 144h |  |
| 200 | 4.7.1.6.2 | Logistics provider - Training |  | 18d | 2017-05-18 | 2017-06-12 | 56FS-20d |  |  | 104d |  |  | Marie C. Gonzalez | 144h |  |
| 201 | 4.7.1.6.3 | Tableau Reporting | milestone | 0d | 2017-06-30 | 2017-06-30 | 80 |  |  | 90d |  |  | IT |  |  |
| 202 | 4.7.1.7 | **Market Post Go-Live** |  | 26d | 2017-06-15 A | 2017-07-21 | 56 | 9% | 23.59d | 76d |  |  |  | 216h |  |
| 203 | 4.7.1.7.1 | Setup Budgets (Needs) & communicate to users |  | 2d | 2017-06-15 | 2017-06-16 |  |  |  | 100d |  |  | Rosa R. | 16h |  |
| 204 | 4.7.1.7.2 | HyperCare Period |  | 25d | 2017-06-15 A | 2017-07-19 |  | 10% | 22.5d | 77d | 1d |  | Daniel B. | 200h |  |
| 205 | 4.7.1.7.3 | Operational Support Begins | milestone | 0d | 2017-07-21 | 2017-07-21 | 204 |  |  | 76d |  | start no earlier than 2017-07-21 | Rosa R. |  |  |

Notes:
- 183: When do we train the trainer?
- 188: Rosa is the trainer

| ID | WBS | Task | Type | Duration | Start | Finish | Predecessors | Complete | Remaining | Total slack | Constraint | Resources | Work | Actual work |
| --- | --- | --- | --- | --- | --- | --- | --- | --- | --- | --- | --- | --- | --- | --- |
| 206 | 4.7.2 | **UK/Ireland** |  | 84d | 2017-04-04 A | 2017-07-28 |  | 71% | 23.98d | 70d |  |  | 3176h | 2461.3h |
| 207 | 4.7.2.1 | **Market Data Preparation** |  | 44.53d | 2017-04-04 A | 2017-06-05 A |  | 100% |  |  |  |  | 192h | 192h |
| 208 | 4.7.2.1.1 | **Provide starter data for EU full for SIT testing** |  | 8d | 2017-04-04 A | 2017-04-13 A |  | 100% |  |  |  |  | 192h | 192h |
| 209 | 4.7.2.1.1.1 | GPO to provide templates to market | milestone | 0d | 2017-04-04 A | 2017-04-04 A |  | 100% |  |  |  | Diane O.; IT |  |  |
| 210 | 4.7.2.1.1.2 | Deliver populated HCP Pool template |  | 8d | 2017-04-04 A | 2017-04-13 A | 209 | 100% |  |  |  | Daniel B. | 64h | 64h |
| 211 | 4.7.2.1.1.3 | Deliver populated Venue list template |  | 8d | 2017-04-04 A | 2017-04-13 A | 209 | 100% |  |  |  | Daniel B. | 64h | 64h |
| 212 | 4.7.2.1.1.4 | Deliver populated User Definition Template populated and Hierarchy for non-CRM users |  | 8d | 2017-04-04 A | 2017-04-13 A | 209 | 100% |  |  |  | Daniel B. | 64h | 64h |
| 213 | 4.7.2.1.1.5 | GPO provide Sign-in Sheet sample | milestone | 0d | 2017-04-13 A | 2017-04-13 A |  | 100% |  |  | start no earlier than 2017-04-17 | Daniel B. |  |  |
| 214 | 4.7.2.1.1.6 | Deliver Market Sign-in Sheet(s) & wording for Digital Sign-in | milestone | 0d | 2017-04-13 A | 2017-04-13 A | 213 | 100% |  |  |  |  |  |  |
| 215 | 4.7.2.1.2 | **Deliver production ready business dataset** |  | 0d | 2017-06-05 A | 2017-06-05 A |  | 100% |  |  |  | Daniel B. |  |  |
| 216 | 4.7.2.1.2.1 | Deliver populated HCP Pool template | milestone | 0d | 2017-06-05 A | 2017-06-05 A |  | 100% |  |  | start no earlier than 2017-06-05 | Daniel B. |  |  |
| 217 | 4.7.2.1.2.2 | Deliver populated Venue list template | milestone | 0d | 2017-06-05 A | 2017-06-05 A |  | 100% |  |  | finish no earlier than 2017-06-05 | Daniel B. |  |  |
| 218 | 4.7.2.1.2.3 | Deliver populated User Definition Template populated and Hierarchy for non-CRM users | milestone | 0d | 2017-06-05 A | 2017-06-05 A |  | 100% |  |  | finish no earlier than 2017-06-05 | Daniel B. |  |  |
| 219 | 4.7.2.1.2.4 | Deliver market Sign-in Sheet(s) & Wording for Digital Sign-in | milestone | 0d | 2017-06-05 A | 2017-06-05 A |  | 100% |  |  | finish no earlier than 2017-06-05 | Daniel B. |  |  |
| 220 | 4.7.2.2 | **Planning** |  | 15d | 2017-04-17 A | 2017-05-05 A |  | 100% |  |  |  |  | 120h | 120h |
| 221 | 4.7.2.2.1 | Confirm Market CM & Comm plan |  | 10d | 2017-04-17 A | 2017-04-28 A |  | 100% |  |  | start no earlier than 2017-04-17 | Daniel B. | 80h | 80h |
| 222 | 4.7.2.2.2 | Develop Cutover Plan |  | 5d | 2017-05-01 A | 2017-05-05 A |  | 100% |  |  | start no earlier than 2017-05-01 | Daniel B. | 40h | 40h |
| 223 | 4.7.2.3 | **HCP Process Confirmation** |  | 11d | 2017-05-12 A | 2017-05-26 A |  | 100% |  |  |  | Daniel B. | 104h | 104h |
| 224 | 4.7.2.3.1 | Demo of Core tool |  | 1d | 2017-05-12 A | 2017-05-12 A |  | 100% |  |  | start no earlier than 2017-05-12 | Daniel B. | 8h | 8h |
| 225 | 4.7.2.3.2 | Market Processes defined / Documented |  | 1d | 2017-05-12 A | 2017-05-12 A |  | 100% |  |  | start no earlier than 2017-05-12 | Daniel B.; Market | 16h | 16h |
| 226 | 4.7.2.3.3 | HCP Process Confirmation |  | 10d | 2017-05-15 A | 2017-05-26 A | 225 | 100% |  |  |  | Daniel B. | 80h | 80h |
| 227 | 4.7.2.4 | **UFT** |  | 35d | 2017-04-17 A | 2017-06-02 A |  | 100% |  |  |  |  | 1184h | 1184h |
| 228 | 4.7.2.4.1 | **UFT Preparation** |  | 25d | 2017-04-17 A | 2017-05-19 A |  | 100% |  |  |  |  | 1016h | 1016h |
| 229 | 4.7.2.4.1.1 | **UFT Logistics** |  | 8d | 2017-05-08 A | 2017-05-17 A |  | 100% |  |  |  | Daniel B.; Market | 768h | 768h |
| 230 | 4.7.2.4.1.1.1 | Confirm Participants |  | 8d | 2017-05-08 A | 2017-05-17 A | 241SS-10d | 100% |  |  | start no earlier than 2017-04-10 | Daniel B.; Market | 128h | 128h |
| 231 | 4.7.2.4.1.1.2 | Confirm IT support |  | 8d | 2017-05-08 A | 2017-05-17 A | 241SS-10d | 100% |  |  | start no earlier than 2017-04-10 | Daniel B.; Market | 128h | 128h |
| 232 | 4.7.2.4.1.1.3 | Confirm location |  | 8d | 2017-05-08 A | 2017-05-17 A | 241SS-10d | 100% |  |  | start no earlier than 2017-04-10 | Daniel B.; Market | 128h | 128h |
| 233 | 4.7.2.4.1.1.4 | Confirm Hardware |  | 8d | 2017-05-08 A | 2017-05-17 A | 241SS-10d | 100% |  |  | start no earlier than 2017-04-10 | Daniel B.; Market | 128h | 128h |
| 234 | 4.7.2.4.1.1.5 | Schedule UFT Sessions |  | 8d | 2017-05-08 A | 2017-05-17 A | 241SS-10d | 100% |  |  | start no earlier than 2017-04-10 | Daniel B.; Market | 128h | 128h |
| 235 | 4.7.2.4.1.2 | Prep UFT Environment (including data prep) |  | 3d | 2017-04-19 A | 2017-04-21 A |  | 100% |  |  | start no earlier than 2017-04-19 | Michelle F. | 24h | 24h |
| 236 | 4.7.2.4.1.3 | Develop UFT Use case Scenarios | milestone | 0d | 2017-04-17 A | 2017-04-17 A |  | 100% |  |  | start no earlier than 2017-04-21 | Shaheen |  |  |
| 237 | 4.7.2.4.1.4 | Demo Core Scripts to GPO Leads |  | 1d | 2017-05-01 A | 2017-05-01 A |  | 100% |  |  | start no earlier than 2017-05-01 | Shaheen | 8h | 8h |
| 238 | 4.7.2.4.1.5 | Demo Core Scripts to Market Leads |  | 1d | 2017-05-02 A | 2017-05-02 A | 237 | 100% |  |  | start no earlier than 2017-05-02 | Daniel B. | 8h | 8h |
| 239 | 4.7.2.4.1.6 | Test Script Prep (localization of core use cases) |  | 13d | 2017-05-03 A | 2017-05-19 A | 238 | 100% |  |  | start no earlier than 2017-05-01 | Daniel B.; Market | 208h | 208h |
| 240 | 4.7.2.4.2 | UFT Training (Demo, Tools & UFT process) |  | 1d | 2017-05-22 A | 2017-05-22 A | 241SS | 100% |  |  |  | Daniel B. | 8h | 8h |
| 241 | 4.7.2.4.3 | UFT Execution |  | 10d | 2017-05-22 A | 2017-06-02 A | 239 | 100% |  |  | start no earlier than 2017-05-22 | Daniel B.; Market | 160h | 160h |

Notes:
- 214: Waiman - I can't fix the timeline
- 222: Will meet with Fabien to discuss ; will reject if someone entered in FFM / activities will stay in the tool they started in. New items in new tool;
- 223: will happen on 5/18
- 236: Diane - 4/10
- 238: will be done on 5/22

| ID | WBS | Task | Type | Duration | Start | Finish | Predecessors | Complete | Remaining | Total slack | Free slack | Constraint | Resources | Work | Actual work |
| --- | --- | --- | --- | --- | --- | --- | --- | --- | --- | --- | --- | --- | --- | --- | --- |
| 242 | 4.7.2.5 | **Training** |  | 78d | 2017-04-12 A | 2017-07-28 |  | 73% | 20.84d | 70d |  |  |  | 1152h | 861.3h |
| 243 | 4.7.2.5.1 | Confirm Market Training Plan | milestone | 0d | 2017-04-21 A | 2017-04-21 A |  | 100% |  |  |  | finish no earlier than 2017-04-25 | Daniel B. |  |  |
| 244 | 4.7.2.5.2 | Determine date for HO training |  | 5d | 2017-04-12 A | 2017-04-18 A |  | 100% |  |  |  | start no earlier than 2017-04-12 | Daniel B. | 40h | 40h |
| 245 | 4.7.2.5.3 | Determine date for Field training |  | 5d | 2017-04-12 A | 2017-04-18 A |  | 100% |  |  |  | start no earlier than 2017-04-12 | Daniel B. | 40h | 40h |
| 246 | 4.7.2.5.4 | **Localize training materials** |  | 25d | 2017-04-17 A | 2017-05-19 A |  | 100% |  |  |  |  | Daniel B.; Maribel R.; Market | 600h | 600h |
| 247 | 4.7.2.5.4.1 | Quick Reference Guides |  | 10d | 2017-04-17 A | 2017-04-28 A |  | 100% |  |  |  | start no earlier than 2017-04-17 |  |  |  |
| 248 | 4.7.2.5.4.2 | Event Owner Browser |  | 10d | 2017-05-01 A | 2017-05-12 A |  | 100% |  |  |  | start no earlier than 2017-05-01 |  |  |  |
| 249 | 4.7.2.5.4.3 | Service Coordinator |  | 5d | 2017-05-08 A | 2017-05-12 A |  | 100% |  |  |  | start no earlier than 2017-05-08 |  |  |  |
| 250 | 4.7.2.5.4.4 | Event Owner Ipad - Confirmation |  | 10d | 2017-05-08 A | 2017-05-19 A |  | 100% |  |  |  | start no earlier than 2017-05-08 |  |  |  |
| 251 | 4.7.2.5.5 | Final updates incorporating localization |  | 5d | 2017-05-22 A | 2017-05-26 A | 250 | 100% |  |  |  |  | Maribel R. | 40h | 40h |
| 252 | 4.7.2.5.6 | **Training Scheduling and Logistics** |  | 29d | 2017-04-24 A | 2017-06-01 |  | 81% | 5.61d | 111d |  |  |  | 88h | 47.83h |
| 253 | 4.7.2.5.6.1 | Identify trainers |  | 18d | 2017-04-24 A | 2017-05-17 A | 243 | 100% |  |  |  |  | Daniel B. |  |  |
| 254 | 4.7.2.5.6.2 | Finalize # of sessions and participants |  | 5d | 2017-05-05 A | 2017-05-11 A | 243FS+10d | 100% |  |  |  | start no earlier than 2016-05-23 | Daniel B. | 40h | 40h |
| 255 | 4.7.2.5.6.3 | Reserve training rooms |  | 5d | 2017-05-18 | 2017-05-24 | 263SS-15d |  |  | 117d |  | start no earlier than 2016-06-13 | Daniel B. | 40h |  |
| 256 | 4.7.2.5.6.4 | **Notify participants** |  | 4d | 2017-05-29 A | 2017-06-01 |  | 67% | 1.33d | 111d |  |  | Daniel B. | 8h | 7.83h |
| 257 | 4.7.2.5.6.4.1 | EMCoE |  | 1d | 2017-06-01 A | 2017-06-01 A | 264SS-5d | 100% |  |  |  |  |  |  |  |
| 258 | 4.7.2.5.6.4.2 | Field users |  | 1d | 2017-05-29 | 2017-05-29 | 265SS-20d |  |  | 114d |  | start no earlier than 2016-06-13 |  |  |  |
| 259 | 4.7.2.5.6.4.3 | Home Office |  | 1d | 2017-05-29 A | 2017-05-29 A | 265SS-20d | 100% |  |  |  |  |  |  |  |
| 260 | 4.7.2.5.7 | **Training Delivery** |  | 40d | 2017-06-05 A | 2017-07-28 |  | 29% | 28.57d | 70d |  |  |  | 344h | 93.47h |
| 261 | 4.7.2.5.7.1 | Train the Trainer (EMCOE & Embassadors) |  | 1d | 2017-06-05 A | 2017-06-05 A | 253 | 100% |  |  |  | start no earlier than 2017-06-05 | Maribel R. | 8h | 8h |
| 262 | 4.7.2.5.7.2 | Trainer Prep |  | 5d | 2017-06-06 A | 2017-06-12 A | 261 | 100% |  |  |  |  | Market | 40h | 40h |
| 263 | 4.7.2.5.7.3 | **Deliver User training** |  | 27d | 2017-06-08 A | 2017-07-14 |  | 21% | 21.32d | 80d | 0d |  | Market | 216h | 45.47h |
| 264 | 4.7.2.5.7.3.1 | Head Office (Medical, Public Affairs & Marketing) |  | 4d | 2017-06-08 A | 2017-06-13 A |  | 100% |  |  |  | start no earlier than 2017-06-08 |  |  |  |
| 265 | 4.7.2.5.7.3.2 | Field - ( IN 3 WAVES) |  | 15d | 2017-06-26 | 2017-07-14 | 262 |  |  | 80d | 0d | start no earlier than 2017-06-26 |  |  |  |
| 266 | 4.7.2.5.7.4 | Training Complete | milestone | 0d | 2017-07-14 | 2017-07-14 | 263 |  |  | 70d | 0d |  |  |  |  |
| 267 | 4.7.2.5.7.5 | Training sustainment |  | 10d | 2017-07-17 | 2017-07-28 | 266 |  |  | 70d |  |  | Market | 80h |  |

Notes:
- 246: Daniel will follow up with Sarah
- 260: training will take place after system goes live
- 261: 6/12;
- 264: 6/19; 4 hours
- 265: 7/3

| ID | WBS | Task | Type | Duration | Start | Finish | Predecessors | Complete | Remaining | Total slack | Free slack | Constraint | Resources | Work |
| --- | --- | --- | --- | --- | --- | --- | --- | --- | --- | --- | --- | --- | --- | --- |
| 268 | 4.7.2.6 | **Market Readiness** |  | 32d | 2017-05-18 | 2017-06-30 |  |  |  | 90d |  |  |  | 288h |
| 269 | 4.7.2.6.1 | Logistics provider - change management |  | 18d | 2017-05-18 | 2017-06-12 | 56FS-20d |  |  | 104d |  |  | toni Prescott | 144h |
| 270 | 4.7.2.6.2 | Logistics provider - Training |  | 18d | 2017-05-18 | 2017-06-12 | 56FS-20d |  |  | 104d |  |  | toni Prescott | 144h |
| 271 | 4.7.2.6.3 | Tableau Reporting | milestone | 0d | 2017-06-30 | 2017-06-30 | 80 |  |  | 90d |  |  | IT |  |
| 272 | 4.7.2.7 | **Market Post Go-Live** |  | 26d | 2017-06-15 A | 2017-07-21 | 56 | 9% | 23.71d | 76d |  |  |  | 136h |
| 273 | 4.7.2.7.1 | Setup Budgets (Needs) & communicate to users |  | 2d | 2017-06-15 | 2017-06-16 |  |  |  | 100d |  | start no earlier than 2017-04-13 | Daniel B. | 16h |
| 274 | 4.7.2.7.2 | HyperCare Period |  | 15d | 2017-06-15 A | 2017-07-05 |  | 10% | 13.5d | 87d | 11d | start no earlier than 2017-06-15 | Daniel B. | 120h |
| 275 | 4.7.2.7.3 | Operational Support Begins | milestone | 0d | 2017-07-21 | 2017-07-21 | 274 |  |  | 76d |  | start no earlier than 2017-07-21 | Daniel B. |  |
| 276 | 4.7.3 | **Spain** |  | 143d? | 2017-03-15 | 2017-09-29 |  |  |  | 0d |  |  |  | 4872h |
| 277 | 4.7.3.1 | **Market Data Preparation** |  | 28d | 2017-07-31 | 2017-09-06 |  |  |  | 42d |  |  |  | 712h |
| 278 | 4.7.3.1.1 | **Provide starter data for SIT testing** |  | 10d | 2017-07-31 | 2017-08-11 | 109SS-35d |  |  | 50d | 0d |  | Marie C. B. | 272h |
| 279 | 4.7.3.1.1.1 | GPO to provide templates to market | milestone | 0d | 2017-07-31 | 2017-07-31 |  |  |  | 52d | 0d |  | Diane O.; IT |  |
| 280 | 4.7.3.1.1.2 | Deliver populated HCP Pool template |  | 8d | 2017-07-31 | 2017-08-09 | 279 |  |  | 52d |  |  | Marie C. B. | 64h |
| 281 | 4.7.3.1.1.3 | Deliver populated Venue list template |  | 8d | 2017-07-31 | 2017-08-09 | 279 |  |  | 52d |  |  | Marie C. B. | 64h |
| 282 | 4.7.3.1.1.4 | Deliver populated User Definition Template populated and Hierarchy for non-CRM users |  | 8d | 2017-07-31 | 2017-08-09 | 279 |  |  | 52d |  |  | Marie C. B. | 64h |
| 283 | 4.7.3.1.1.5 | GPO provide Sign-in Sheet sample |  | 10d | 2017-07-31 | 2017-08-11 |  |  |  | 50d | 0d | start no earlier than 2017-04-17 | Marie C. B. |  |
| 284 | 4.7.3.1.1.6 | Deliver Market Sign-in Sheet(s) & wording for Digital Sign-in | milestone | 0d | 2017-08-11 | 2017-08-11 | 283 |  |  | 50d |  |  |  |  |
| 285 | 4.7.3.1.2 | **Provide Business data refresh** |  | 5d | 2017-08-21 | 2017-08-25 | 278FS+5d |  |  | 50d |  |  | Marie C. B. | 200h |
| 286 | 4.7.3.1.2.1 | Deliver populated HCP Pool template |  | 5d | 2017-08-21 | 2017-08-25 |  |  |  | 50d |  |  | Marie C. B. | 40h |
| 287 | 4.7.3.1.2.2 | Deliver populated Venue list template |  | 5d | 2017-08-21 | 2017-08-25 |  |  |  | 50d |  |  | Marie C. B. | 40h |
| 288 | 4.7.3.1.2.3 | Deliver populated User Definition Template populated and Hierarchy for non-CRM users |  | 5d | 2017-08-21 | 2017-08-25 |  |  |  | 50d |  |  | Marie C. B. | 40h |
| 289 | 4.7.3.1.2.4 | Deliver market Sign-in Sheet(s) & Wording for Digital Sign-in |  | 5d | 2017-08-21 | 2017-08-25 |  |  |  | 50d |  |  | Marie C. B. | 40h |
| 290 | 4.7.3.1.3 | **Deliver production ready business dataset** |  | 7d | 2017-08-29 | 2017-09-06 | 106SS-7d |  |  | 42d |  |  | Marie C. B. | 240h |
| 291 | 4.7.3.1.3.1 | Deliver populated HCP Pool template |  | 7d | 2017-08-29 | 2017-09-06 |  |  |  | 42d |  | start no earlier than 2017-06-05 | Marie C. B. | 40h |
| 292 | 4.7.3.1.3.2 | Deliver populated Venue list template |  | 6d | 2017-08-29 | 2017-09-05 |  |  |  | 43d |  | finish no earlier than 2017-06-05 | Marie C. B. | 48h |
| 293 | 4.7.3.1.3.3 | Deliver populated User Definition Template populated and Hierarchy for non-CRM users |  | 6d | 2017-08-29 | 2017-09-05 |  |  |  | 43d |  | finish no earlier than 2017-06-05 | Marie C. B. | 48h |
| 294 | 4.7.3.1.3.4 | Deliver market Sign-in Sheet(s) & Wording for Digital Sign-in |  | 6d | 2017-08-29 | 2017-09-05 |  |  |  | 43d |  | finish no earlier than 2017-06-05 | Marie C. B. | 48h |

Notes:
- 284: Waiman - I can't fix the timeline

| ID | WBS | Task | Duration | Start | Finish | Predecessors | Total slack | Free slack | Constraint | Resources | Work |
| --- | --- | --- | --- | --- | --- | --- | --- | --- | --- | --- | --- |
| 295 | 4.7.3.2 | **System Translation Activities** | 22d | 2017-07-10 | 2017-08-08 |  | 35d |  |  |  | 296h |
| 296 | 4.7.3.2.1 | Provide market fields that may need to be translated | 5d | 2017-07-10 | 2017-07-14 | 109SS-50d | 35d | 0d |  | IT | 40h |
| 297 | 4.7.3.2.2 | Translate all required fields | 15d | 2017-07-17 | 2017-08-04 | 296 | 35d | 0d |  | Marie C. B.; Market | 240h |
| 298 | 4.7.3.2.3 | Update environments with translated fields | 2d | 2017-08-07 | 2017-08-08 | 297 | 35d | 0d |  | IT | 16h |
| 299 | 4.7.3.3 | **Planning** | 10d | 2017-07-31 | 2017-08-11 | 109SS-35d | 30d |  |  |  | 120h |
| 300 | 4.7.3.3.1 | Confirm Market CM & Comm plan | 10d | 2017-07-31 | 2017-08-11 |  | 30d | 0d | start no earlier than 2017-04-17 | Marie C. B. | 80h |
| 301 | 4.7.3.3.2 | Develop Cutover Plan | 5d | 2017-07-31 | 2017-08-04 |  | 65d |  | start no earlier than 2017-05-01 | Marie C. B. | 40h |
| 302 | 4.7.3.4 | **HCP Process Confirmation** | 24d | 2017-07-31 | 2017-08-31 | 109SS-35d | 46d |  |  | Marie C. B. | 448h |
| 303 | 4.7.3.4.1 | Demo of Core tool | 7d | 2017-07-31 | 2017-08-08 |  | 46d | 0d | start no earlier than 2017-04-22 | Marie C. B. |  |
| 304 | 4.7.3.4.2 | Market Processes defined / Documented | 15d | 2017-08-09 | 2017-08-29 | 303 | 46d | 0d | start no earlier than 2017-04-19 | Market; Marie C. B. | 240h |
| 305 | 4.7.3.4.3 | HCP Process Confirmation | 2d | 2017-08-30 | 2017-08-31 | 304 | 46d |  |  | Marie C. B. | 16h |
| 306 | 4.7.3.5 | **UFT** | 30d | 2017-07-27 | 2017-09-06 |  | 42d |  |  |  | 1128h |
| 307 | 4.7.3.5.1 | **UFT Preparation** | 21d | 2017-07-27 | 2017-08-24 |  | 51d |  |  |  | 1040h |
| 308 | 4.7.3.5.1.1 | **UFT Logistics** | 8d | 2017-08-10 | 2017-08-21 | 320SS-15d | 54d |  |  | Market; Marie C. B. | 768h |
| 309 | 4.7.3.5.1.1.1 | Confirm Participants | 8d | 2017-08-10 | 2017-08-21 |  | 54d |  | start no earlier than 2017-04-10 | Market; Marie C. B. | 128h |
| 310 | 4.7.3.5.1.1.2 | Confirm IT support | 8d | 2017-08-10 | 2017-08-21 |  | 54d |  | start no earlier than 2017-04-10 | Market; Marie C. B. | 128h |
| 311 | 4.7.3.5.1.1.3 | Confirm location | 8d | 2017-08-10 | 2017-08-21 |  | 54d |  | start no earlier than 2017-04-10 | Market; Marie C. B. | 128h |
| 312 | 4.7.3.5.1.1.4 | Confirm Hardware | 8d | 2017-08-10 | 2017-08-21 |  | 54d |  | start no earlier than 2017-04-10 | Market; Marie C. B. | 128h |
| 313 | 4.7.3.5.1.1.5 | Schedule UFT Sessions | 8d | 2017-08-10 | 2017-08-21 |  | 54d |  | start no earlier than 2017-04-10 | Market; Marie C. B. | 128h |
| 314 | 4.7.3.5.1.2 | Prep UFT Environment (including data prep) | 3d | 2017-07-27 | 2017-07-31 | 320SS-25d | 69d |  | start no earlier than 2017-04-19 | Michelle F. | 24h |
| 315 | 4.7.3.5.1.3 | Develop UFT Use case Scenarios | 9d | 2017-07-27 | 2017-08-08 | 320SS-25d | 51d | 0d | start no earlier than 2017-04-21 | Shaheen | 72h |
| 316 | 4.7.3.5.1.4 | Demo Core Scripts to GPO Leads | 1d | 2017-08-09 | 2017-08-09 | 315 | 51d | 0d | start no earlier than 2017-05-01 | Shaheen | 8h |
| 317 | 4.7.3.5.1.5 | Demo Core Scripts to Market Leads | 1d | 2017-08-10 | 2017-08-10 | 316 | 51d | 0d | start no earlier than 2017-05-02 | Marie C. B. | 8h |
| 318 | 4.7.3.5.1.6 | Test Script Prep | 10d | 2017-08-11 | 2017-08-24 | 317 | 51d |  | start no earlier than 2017-05-01 | Market; Marie C. B. | 160h |
| 319 | 4.7.3.5.2 | UFT Training (Demo, Tools & UFT process) | 1d | 2017-08-31 | 2017-08-31 | 320SS | 46d |  |  | Diane O. | 8h |
| 320 | 4.7.3.5.3 | UFT Execution | 5d | 2017-08-31 | 2017-09-06 | 106SS-5d | 30d | 0d | start no earlier than 2017-05-22 | Diane O.; Market | 80h |

Notes:
- 296: Veeva
- 301: activities will stay in the tool they started in. New items in new tool
- 315: Diane - 4/10

| ID | WBS | Task | Type | Duration | Start | Finish | Predecessors | Total slack | Free slack | Constraint | Resources | Work |
| --- | --- | --- | --- | --- | --- | --- | --- | --- | --- | --- | --- | --- |
| 321 | 4.7.3.6 | **Training** |  | 80d | 2017-06-12 | 2017-09-29 | 109SS-70d | 25d |  |  |  | 2072h |
| 322 | 4.7.3.6.1 | Confirm Market Training Plan |  | 9d | 2017-06-12 | 2017-06-22 |  | 66d | 0d | finish no earlier than 2017-04-25 | Marie C. B. | 72h |
| 323 | 4.7.3.6.2 | Determine date for HO training |  | 5d | 2017-06-12 | 2017-06-16 |  | 100d |  | start no earlier than 2017-04-12 | Marie C. B. | 40h |
| 324 | 4.7.3.6.3 | Determine date for Field training |  | 5d | 2017-06-12 | 2017-06-16 |  | 100d |  | start no earlier than 2017-04-12 | Marie C. B. | 40h |
| 325 | 4.7.3.6.4 | **Localize training materials** |  | 18d | 2017-06-14 | 2017-07-07 | 105 | 35d | 0d |  | Market; Marie C. B. | 1360h |
| 326 | 4.7.3.6.4.1 | Quick Reference Guides |  | 13d | 2017-06-14 | 2017-06-30 |  | 40d |  | start no earlier than 2017-05-03 | Market; Marie C. B. | 208h |
| 327 | 4.7.3.6.4.2 | Event Owner Browser |  | 18d | 2017-06-14 | 2017-07-07 |  | 35d |  | start no earlier than 2017-05-03 | Market; Marie C. B. | 288h |
| 328 | 4.7.3.6.4.3 | Service Coordinator |  | 18d | 2017-06-14 | 2017-07-07 |  | 35d |  | start no earlier than 2017-05-08 | Market; Marie C. B. | 288h |
| 329 | 4.7.3.6.4.4 | Event Owner Ipad - Confirmation |  | 18d | 2017-06-14 | 2017-07-07 |  | 35d |  | start no earlier than 2017-05-08 | Market; Marie C. B. | 288h |
| 330 | 4.7.3.6.5 | Final updates incorporating localization |  | 10d | 2017-07-10 | 2017-07-21 | 325 | 35d | 0d |  | Maribel R. | 80h |
| 331 | 4.7.3.6.6 | Translation of training materials |  | 12d | 2017-07-24 | 2017-08-08 | 330 | 35d | 0d |  | Market | 96h |
| 332 | 4.7.3.6.7 | Fianlize Training materials |  | 8d | 2017-08-09 | 2017-08-18 | 331, 298 | 35d | 0d |  | Maribel R. | 64h |
| 333 | 4.7.3.6.8 | **Training Scheduling and Logistics** |  | 47d | 2017-06-22 | 2017-08-28 |  | 49d |  |  |  | 80h |
| 334 | 4.7.3.6.8.1 | Identify trainers |  | 10d | 2017-06-22 | 2017-07-06 | 322 | 66d | 31d |  | Marie C. B. |  |
| 335 | 4.7.3.6.8.2 | Finalize # of sessions and participants |  | 10d | 2017-06-23 | 2017-07-06 | 322 | 86d |  | start no earlier than 2016-05-23 | Marie C. B. | 40h |
| 336 | 4.7.3.6.8.3 | Reserve training rooms |  | 5d | 2017-08-21 | 2017-08-25 | 344SS-15d | 50d |  | start no earlier than 2016-06-13 | Marie C. B. | 40h |
| 337 | 4.7.3.6.8.4 | **Notify participants** |  | 11d | 2017-08-14 | 2017-08-28 |  | 49d |  |  | Daniel B. |  |
| 338 | 4.7.3.6.8.4.1 | EMCoE |  | 1d | 2017-08-28 | 2017-08-28 | 345SS-10d | 49d |  |  |  |  |
| 339 | 4.7.3.6.8.4.2 | Field users |  | 1d | 2017-08-14 | 2017-08-14 | 347SS-20d | 59d |  |  |  |  |
| 340 | 4.7.3.6.8.4.3 | Home Office |  | 1d | 2017-08-14 | 2017-08-14 | 346SS-20d | 59d |  |  |  |  |
| 341 | 4.7.3.6.9 | **Training Delivery** |  | 30d | 2017-08-21 | 2017-09-29 | 332 | 25d |  |  |  | 240h |
| 342 | 4.7.3.6.9.1 | Train the Trainer |  | 5d | 2017-08-21 | 2017-08-25 | 334 | 35d | 0d | start no earlier than 2017-05-22 | Maribel R. | 40h |
| 343 | 4.7.3.6.9.2 | Trainer Prep |  | 10d | 2017-08-28 | 2017-09-08 | 342 | 35d | 0d |  | Market | 80h |
| 344 | 4.7.3.6.9.3 | **Deliver User training** |  | 5d | 2017-09-11 | 2017-09-15 | 109SS-5d, 343 | 35d | 0d |  | Market | 40h |
| 345 | 4.7.3.6.9.3.1 | EMCOE (EO & SC) |  | 5d | 2017-09-11 | 2017-09-15 |  | 35d | 0d | start no earlier than 2017-05-30 |  |  |
| 346 | 4.7.3.6.9.3.2 | Home Office |  | 5d | 2017-09-11 | 2017-09-15 |  | 35d | 0d |  |  |  |
| 347 | 4.7.3.6.9.3.3 | Field users |  | 5d | 2017-09-11 | 2017-09-15 |  | 35d | 0d | start no earlier than 2017-06-08 |  |  |
| 348 | 4.7.3.6.9.4 | Training Complete | milestone | 0d | 2017-09-15 | 2017-09-15 | 344 | 25d | 0d |  |  |  |
| 349 | 4.7.3.6.9.5 | Training sustainment |  | 10d | 2017-09-18 | 2017-09-29 | 348 | 25d |  |  | Market | 80h |

Notes:
- 325: Dependent on what additional changes Core needs to make
- 337: When do we train the trainer?

| ID | WBS | Task | Type | Duration | Start | Finish | Predecessors | Total slack | Free slack | Constraint | Resources | Work |
| --- | --- | --- | --- | --- | --- | --- | --- | --- | --- | --- | --- | --- |
| 350 | 4.7.3.7 | **Communications & change Management** |  | 30d | 2017-08-14 | 2017-09-22 |  | 30d |  |  |  |  |
| 351 | 4.7.3.7.1 | Execute Communications & change management plan |  | 30d | 2017-08-14 | 2017-09-22 | 300 | 30d |  |  |  |  |
| 352 | 4.7.3.8 | **Logistics provider** |  | 0d? | 2017-03-15 | 2017-03-15 |  | 0d |  |  |  |  |
| 353 | 4.7.3.8.1 | Logistics provider - change management | manual | 1d? | 2017-03-15 | 2017-03-15 |  |  |  |  |  |  |
| 354 | 4.7.3.8.2 | Logistics provider - Training | manual | 1d? | 2017-03-15 | 2017-03-15 |  |  |  |  |  |  |
| 355 | 4.7.3.9 | **Market Post Go-Live** |  | 10d | 2017-09-18 | 2017-09-29 | 109 | 25d |  |  |  | 96h |
| 356 | 4.7.3.9.1 | Setup Budgets (Needs) & communicate to users |  | 2d | 2017-09-18 | 2017-09-19 |  | 33d |  | start no earlier than 2017-04-13 | Marie C. B. | 16h |
| 357 | 4.7.3.9.2 | HyperCare Period |  | 10d | 2017-09-18 | 2017-09-29 |  | 25d | 0d | start no earlier than 2017-06-15 | Daniel B. | 80h |
| 358 | 4.7.3.9.3 | Operational Support Begins | milestone | 0d | 2017-09-29 | 2017-09-29 | 357 | 25d |  | start no earlier than 2017-07-21 | Marie C. B. |  |
| 359 | 4.7.4 | **Italy** |  | 168d? | 2017-03-15 | 2017-11-03 |  | 0d |  |  |  | 4392h |
| 360 | 4.7.4.1 | **Market Data Preparation** |  | 78.47d | 2017-05-26 | 2017-09-13 |  | 0d |  |  |  | 760h |
| 361 | 4.7.4.1.1 | **Provide starter data for SIT testing** |  | 10d | 2017-07-24 | 2017-08-04 | 117SS-45d | 55d | 0d |  | Marie C. B. | 272h |
| 362 | 4.7.4.1.1.1 | GPO to provide templates to market | milestone | 0d | 2017-07-24 | 2017-07-24 |  | 57d | 0d |  | Diane O.; IT |  |
| 363 | 4.7.4.1.1.2 | Deliver populated HCP Pool template |  | 8d | 2017-07-24 | 2017-08-02 | 362 | 57d |  |  | Marie C. B. | 64h |
| 364 | 4.7.4.1.1.3 | Deliver populated Venue list template |  | 8d | 2017-07-24 | 2017-08-02 | 362 | 57d |  |  | Marie C. B. | 64h |
| 365 | 4.7.4.1.1.4 | Deliver populated User Definition Template populated and Hierarchy for non-CRM users |  | 8d | 2017-07-24 | 2017-08-02 | 362 | 57d |  |  | Marie C. B. | 64h |
| 366 | 4.7.4.1.1.5 | GPO provide Sign-in Sheet sample |  | 10d | 2017-07-24 | 2017-08-04 |  | 55d | 0d | start no earlier than 2017-04-17 | Marie C. B. |  |
| 367 | 4.7.4.1.1.6 | Deliver Market Sign-in Sheet(s) & wording for Digital Sign-in | milestone | 0d | 2017-08-04 | 2017-08-04 | 366 | 55d |  |  |  |  |
| 368 | 4.7.4.1.2 | **Provide Business data refresh** |  | 5d | 2017-08-14 | 2017-08-18 | 361FS+5d | 55d |  |  | Marie C. B. | 200h |
| 369 | 4.7.4.1.2.1 | Deliver populated HCP Pool template |  | 5d | 2017-08-14 | 2017-08-18 |  | 55d |  |  | Marie C. B. | 40h |
| 370 | 4.7.4.1.2.2 | Deliver populated Venue list template |  | 5d | 2017-08-14 | 2017-08-18 |  | 55d |  |  | Marie C. B. | 40h |
| 371 | 4.7.4.1.2.3 | Deliver populated User Definition Template populated and Hierarchy for non-CRM users |  | 5d | 2017-08-14 | 2017-08-18 |  | 55d |  |  | Marie C. B. | 40h |
| 372 | 4.7.4.1.2.4 | Deliver market Sign-in Sheet(s) & Wording for Digital Sign-in |  | 5d | 2017-08-14 | 2017-08-18 |  | 55d |  |  | Marie C. B. | 40h |
| 373 | 4.7.4.1.3 | **Deliver production ready business dataset** |  | 13d | 2017-08-28 | 2017-09-13 | 117SS-20d |  |  |  | Marie C. B. | 288h |
| 374 | 4.7.4.1.3.1 | Deliver populated HCP Pool template |  | 7d | 2017-06-05 | 2017-06-14 |  | 0d |  | start no earlier than 2017-06-05 | Marie C. B. | 40h |
| 375 | 4.7.4.1.3.2 | Deliver populated Venue list template |  | 6d | 2017-05-26 | 2017-06-05 |  | 0d |  | finish no earlier than 2017-06-05 | Marie C. B. | 48h |
| 376 | 4.7.4.1.3.3 | Deliver populated User Definition Template populated and Hierarchy for non-CRM users |  | 6d | 2017-05-26 | 2017-06-05 |  | 0d |  | finish no earlier than 2017-06-05 | Marie C. B. | 48h |
| 377 | 4.7.4.1.3.4 | Deliver market Sign-in Sheet(s) & Wording for Digital Sign-in |  | 6d | 2017-05-26 | 2017-06-05 |  | 0d |  | finish no earlier than 2017-06-05 | Marie C. B. | 48h |

Notes:
- 367: Waiman - I can't fix the timeline
- 368: Optional
- 373: market prefers to get it done 18 days earlier

| ID | WBS | Task | Duration | Start | Finish | Predecessors | Total slack | Free slack | Constraint | Resources | Work |
| --- | --- | --- | --- | --- | --- | --- | --- | --- | --- | --- | --- |
| 378 | 4.7.4.2 | **System Translation Activities** | 17d | 2017-07-03 | 2017-07-25 |  | 41d |  |  |  | 216h |
| 379 | 4.7.4.2.1 | Provide market fields that may need to be translated | 5d | 2017-07-03 | 2017-07-07 | 117SS-60d | 41d | 0d |  | IT | 40h |
| 380 | 4.7.4.2.2 | Translate all required fields | 10d | 2017-07-10 | 2017-07-21 | 379 | 41d | 0d |  | Marie C. B.; Market | 160h |
| 381 | 4.7.4.2.3 | Update environments with translated fields | 2d | 2017-07-24 | 2017-07-25 | 380 | 41d | 5d |  | IT | 16h |
| 382 | 4.7.4.3 | **Planning** | 8d | 2017-06-12 | 2017-06-21 | 117SS-75d | 26d |  |  |  | 104h |
| 383 | 4.7.4.3.1 | Confirm Market CM & Comm plan | 8d | 2017-06-12 | 2017-06-21 |  | 26d | 0d | start no earlier than 2017-04-17 | Marie C. B. | 64h |
| 384 | 4.7.4.3.2 | Develop Cutover Plan | 5d | 2017-06-12 | 2017-06-16 |  | 100d |  | start no earlier than 2017-05-01 | Marie C. B. | 40h |
| 385 | 4.7.4.4 | **HCP Process Confirmation** | 24d | 2017-06-12 | 2017-07-13 | 117SS-75d | 81d |  |  | Marie C. B. | 448h |
| 386 | 4.7.4.4.1 | Demo of Core tool | 7d | 2017-06-12 | 2017-06-20 |  | 81d | 0d | start no earlier than 2017-04-22 | Marie C. B. |  |
| 387 | 4.7.4.4.2 | Market Processes defined / Documented | 15d | 2017-06-21 | 2017-07-11 | 386 | 81d | 0d | start no earlier than 2017-04-19 | Market; Marie C. B. | 240h |
| 388 | 4.7.4.4.3 | HCP Process Confirmation | 2d | 2017-07-12 | 2017-07-13 | 387 | 81d |  |  | Marie C. B. | 16h |
| 389 | 4.7.4.5 | **UFT** | 37d | 2017-07-25 | 2017-09-13 |  | 37d |  |  |  | 1256h |
| 390 | 4.7.4.5.1 | **UFT Preparation** | 23d | 2017-07-25 | 2017-08-24 |  | 51d |  |  |  | 1056h |
| 391 | 4.7.4.5.1.1 | **UFT Logistics** | 8d | 2017-08-10 | 2017-08-21 | 403SS-13d | 54d |  |  | Market; Marie C. B. | 768h |
| 392 | 4.7.4.5.1.1.1 | Confirm Participants | 8d | 2017-08-10 | 2017-08-21 |  | 54d |  | start no earlier than 2017-04-10 | Market; Marie C. B. | 128h |
| 393 | 4.7.4.5.1.1.2 | Confirm IT support | 8d | 2017-08-10 | 2017-08-21 |  | 54d |  | start no earlier than 2017-04-10 | Market; Marie C. B. | 128h |
| 394 | 4.7.4.5.1.1.3 | Confirm location | 8d | 2017-08-10 | 2017-08-21 |  | 54d |  | start no earlier than 2017-04-10 | Market; Marie C. B. | 128h |
| 395 | 4.7.4.5.1.1.4 | Confirm Hardware | 8d | 2017-08-10 | 2017-08-21 |  | 54d |  | start no earlier than 2017-04-10 | Market; Marie C. B. | 128h |
| 396 | 4.7.4.5.1.1.5 | Schedule UFT Sessions | 8d | 2017-08-10 | 2017-08-21 |  | 54d |  | start no earlier than 2017-04-10 | Market; Marie C. B. | 128h |
| 397 | 4.7.4.5.1.2 | Prep UFT Environment (including data prep) | 3d | 2017-07-25 | 2017-07-27 | 403SS-25d | 71d |  | start no earlier than 2017-04-19 | Michelle F. | 24h |
| 398 | 4.7.4.5.1.3 | Develop UFT Use case Scenarios | 11d | 2017-07-25 | 2017-08-08 | 403SS-25d | 51d | 0d | start no earlier than 2017-04-21 | Shaheen | 88h |
| 399 | 4.7.4.5.1.4 | Demo Core Scripts to GPO Leads | 1d | 2017-08-09 | 2017-08-09 | 398 | 51d | 0d | start no earlier than 2017-05-01 | Shaheen | 8h |
| 400 | 4.7.4.5.1.5 | Demo Core Scripts to Market Leads | 1d | 2017-08-10 | 2017-08-10 | 399 | 51d | 0d | start no earlier than 2017-05-02 | Marie C. B. | 8h |
| 401 | 4.7.4.5.1.6 | Test Script Prep | 10d | 2017-08-11 | 2017-08-24 | 400 | 51d |  | start no earlier than 2017-05-01 | Market; Marie C. B. | 160h |
| 402 | 4.7.4.5.2 | UFT Training (Demo, Tools & UFT process) | 1d | 2017-08-29 | 2017-08-29 | 403SS | 48d |  |  | Diane O. | 8h |
| 403 | 4.7.4.5.3 | UFT Execution | 12d | 2017-08-29 | 2017-09-13 | 111FS+1d | 25d | 0d | start no earlier than 2017-05-22 | Diane O.; Market | 192h |

Notes:
- 379: Veeva
- 384: activities will stay in the tool they started in. New items in new tool
- 398: Diane - 4/10

| ID | WBS | Task | Type | Duration | Start | Finish | Predecessors | Total slack | Free slack | Constraint | Resources | Work |
| --- | --- | --- | --- | --- | --- | --- | --- | --- | --- | --- | --- | --- |
| 404 | 4.7.4.6 | **Training** |  | 105d | 2017-06-12 | 2017-11-03 | 117SS-75d | 0d |  |  |  | 1512h |
| 405 | 4.7.4.6.1 | Confirm Market Training Plan |  | 9d | 2017-06-12 | 2017-06-22 |  | 67d | 0d | finish no earlier than 2017-04-25 | Marie C. B. | 72h |
| 406 | 4.7.4.6.2 | Determine date for HO training |  | 5d | 2017-06-12 | 2017-06-16 |  | 100d |  | start no earlier than 2017-04-12 | Marie C. B. | 40h |
| 407 | 4.7.4.6.3 | Determine date for Field training |  | 5d | 2017-06-12 | 2017-06-16 |  | 100d |  | start no earlier than 2017-04-12 | Marie C. B. | 40h |
| 408 | 4.7.4.6.4 | **Localize training materials** |  | 10d | 2017-06-14 | 2017-06-27 | 105 | 36d | 0d |  | Market; Marie C. B. | 800h |
| 409 | 4.7.4.6.4.1 | Quick Reference Guides |  | 10d | 2017-06-14 | 2017-06-27 |  | 36d |  | start no earlier than 2017-05-03 | Market; Marie C. B. | 160h |
| 410 | 4.7.4.6.4.2 | Event Owner Browser |  | 10d | 2017-06-14 | 2017-06-27 |  | 36d |  | start no earlier than 2017-05-03 | Market; Marie C. B. | 160h |
| 411 | 4.7.4.6.4.3 | Service Coordinator |  | 10d | 2017-06-14 | 2017-06-27 |  | 36d |  | start no earlier than 2017-05-08 | Market; Marie C. B. | 160h |
| 412 | 4.7.4.6.4.4 | Event Owner Ipad - Confirmation |  | 10d | 2017-06-14 | 2017-06-27 |  | 36d |  | start no earlier than 2017-05-08 | Market; Marie C. B. | 160h |
| 413 | 4.7.4.6.5 | Final updates incorporating localization |  | 8d | 2017-06-28 | 2017-07-07 | 408 | 36d | 0d |  | Maribel R. | 64h |
| 414 | 4.7.4.6.6 | Translation of training materials |  | 10d | 2017-07-10 | 2017-07-21 | 413 | 36d | 0d |  | Market | 80h |
| 415 | 4.7.4.6.7 | Fianlize Training materials |  | 13d | 2017-08-02 | 2017-08-18 | 381, 414FS+7d | 36d | 2d |  | Maribel R. | 104h |
| 416 | 4.7.4.6.8 | **Training Scheduling and Logistics** |  | 67d | 2017-06-22 | 2017-09-25 |  | 29d |  |  |  | 80h |
| 417 | 4.7.4.6.8.1 | Identify trainers |  | 10d | 2017-06-22 | 2017-07-06 | 405 | 67d | 33d |  | Marie C. B. |  |
| 418 | 4.7.4.6.8.2 | Finalize # of sessions and participants |  | 10d | 2017-06-23 | 2017-07-06 | 405 | 86d |  | start no earlier than 2016-05-23 | Marie C. B. | 40h |
| 419 | 4.7.4.6.8.3 | Reserve training rooms |  | 5d | 2017-09-18 | 2017-09-22 | 427SS-15d | 30d |  | start no earlier than 2016-06-13 | Marie C. B. | 40h |
| 420 | 4.7.4.6.8.4 | **Notify participants** |  | 11d | 2017-09-11 | 2017-09-25 |  | 29d |  |  | Daniel B. |  |
| 421 | 4.7.4.6.8.4.1 | EMCoE |  | 1d | 2017-09-25 | 2017-09-25 | 428SS-10d | 29d |  |  |  |  |
| 422 | 4.7.4.6.8.4.2 | Field users |  | 1d | 2017-09-11 | 2017-09-11 | 430SS-20d | 39d |  |  |  |  |
| 423 | 4.7.4.6.8.4.3 | Home Office |  | 1d | 2017-09-11 | 2017-09-11 | 429SS-20d | 39d |  |  |  |  |
| 424 | 4.7.4.6.9 | **Training Delivery** |  | 53d | 2017-08-23 | 2017-11-03 | 415 | 0d |  |  |  | 232h |
| 425 | 4.7.4.6.9.1 | Train the Trainer |  | 3d | 2017-08-23 | 2017-08-25 | 417 | 34d | 0d | start no earlier than 2017-08-23 | Maribel R. | 24h |
| 426 | 4.7.4.6.9.2 | Trainer Prep |  | 6d | 2017-08-28 | 2017-09-04 | 425 | 34d | 24d |  | Market | 48h |
| 427 | 4.7.4.6.9.3 | **Deliver User training** |  | 10d | 2017-10-09 | 2017-10-20 | 426, 117SS+10d | 10d | 0d |  | Market | 80h |
| 428 | 4.7.4.6.9.3.1 | EMCOE (EO & SC) |  | 10d | 2017-10-09 | 2017-10-20 |  | 10d | 0d | start no earlier than 2017-05-30 |  |  |
| 429 | 4.7.4.6.9.3.2 | Home Office |  | 10d | 2017-10-09 | 2017-10-20 |  | 10d | 0d |  |  |  |
| 430 | 4.7.4.6.9.3.3 | Field users |  | 10d | 2017-10-09 | 2017-10-20 |  | 10d | 0d | start no earlier than 2017-06-08 |  |  |
| 431 | 4.7.4.6.9.4 | Training Complete | milestone | 0d | 2017-10-20 | 2017-10-20 | 427 | 0d |  |  |  |  |
| 432 | 4.7.4.6.9.5 | Training sustainment |  | 10d | 2017-10-23 | 2017-11-03 | 431 | 0d |  |  | Market | 80h |

Notes:
- 408: Dependent on what additional changes Core needs to make
- 420: When do we train the trainer?

| ID | WBS | Task | Type | Duration | Start | Finish | Predecessors | Total slack | Free slack | Constraint | Resources | Work |
| --- | --- | --- | --- | --- | --- | --- | --- | --- | --- | --- | --- | --- |
| 433 | 4.7.4.7 | **Communications & change Management** |  | 71d | 2017-06-22 | 2017-09-28 |  | 26d |  |  |  |  |
| 434 | 4.7.4.7.1 | Execute Communications & change management plan |  | 71d | 2017-06-22 | 2017-09-28 | 383 | 26d |  |  |  |  |
| 435 | 4.7.4.8 | **Logistics provider** |  | 1d? | 2017-03-15 | 2017-03-15 |  | 167d |  |  |  |  |
| 436 | 4.7.4.8.1 | Logistics provider - change management |  | 1d? | 2017-03-15 | 2017-03-15 |  | 167d |  |  |  |  |
| 437 | 4.7.4.8.2 | Logistics provider - Training |  | 1d? | 2017-03-15 | 2017-03-15 |  | 167d |  |  |  |  |
| 438 | 4.7.4.9 | **Market Post Go-Live** |  | 10d | 2017-09-25 | 2017-10-06 | 117 | 20d |  |  |  | 96h |
| 439 | 4.7.4.9.1 | Setup Budgets (Needs) & communicate to users |  | 2d | 2017-09-25 | 2017-09-26 |  | 28d |  | start no earlier than 2017-04-13 | Marie C. B. | 16h |
| 440 | 4.7.4.9.2 | HyperCare Period |  | 10d | 2017-09-25 | 2017-10-06 |  | 20d | 0d | start no earlier than 2017-06-15 | Daniel B. | 80h |
| 441 | 4.7.4.9.3 | Operational Support Begins | milestone | 0d | 2017-10-06 | 2017-10-06 | 440 | 20d |  | start no earlier than 2017-07-21 | Marie C. B. |  |
| 442 | 4.7.5 | **Nordics** |  | 123d? | 2017-03-15 | 2017-09-01 |  | 0d |  |  |  | 3984h |
| 443 | 4.7.5.1 | **Market Data Preparation** |  | 30d | 2017-06-28 | 2017-08-08 |  | 63d |  |  |  | 592h |
| 444 | 4.7.5.1.1 | **Provide starter data for SIT testing** |  | 13d | 2017-06-28 | 2017-07-14 | 92SS-38d | 80d |  |  | Rosa R. | 352h |
| 445 | 4.7.5.1.1.1 | GPO to provide templates to market | milestone | 0d | 2017-06-28 | 2017-06-28 |  | 85d | 0d |  | Diane O.; IT |  |
| 446 | 4.7.5.1.1.2 | Deliver populated HCP Pool template |  | 8d | 2017-06-28 | 2017-07-07 | 445 | 85d |  |  | Rosa R. | 64h |
| 447 | 4.7.5.1.1.3 | Deliver populated Venue list template |  | 8d | 2017-06-28 | 2017-07-07 | 445 | 85d |  |  | Rosa R. | 64h |
| 448 | 4.7.5.1.1.4 | Deliver populated User Definition Template populated and Hierarchy for non-CRM users |  | 8d | 2017-06-28 | 2017-07-07 | 445 | 85d |  |  | Rosa R. | 64h |
| 449 | 4.7.5.1.1.5 | GPO provide Sign-in Sheet sample |  | 13d | 2017-06-28 | 2017-07-14 |  | 80d | 0d | start no earlier than 2017-04-17 | Rosa R. | 56h |
| 450 | 4.7.5.1.1.6 | Deliver Market Sign-in Sheet(s) & wording for Digital Sign-in | milestone | 0d | 2017-07-14 | 2017-07-14 | 449 | 80d |  |  |  |  |
| 451 | 4.7.5.1.2 | **Deliver production ready business dataset** |  | 6d | 2017-08-01 | 2017-08-08 | 89SS-7d | 63d |  |  | Rosa R. | 240h |
| 452 | 4.7.5.1.2.1 | Deliver populated HCP Pool template |  | 6d | 2017-08-01 | 2017-08-08 |  | 63d |  | start no earlier than 2017-06-05 | Rosa R. | 48h |
| 453 | 4.7.5.1.2.2 | Deliver populated Venue list template |  | 6d | 2017-08-01 | 2017-08-08 |  | 63d |  | finish no earlier than 2017-06-05 | Rosa R. | 48h |
| 454 | 4.7.5.1.2.3 | Deliver populated User Definition Template populated and Hierarchy for non-CRM users |  | 6d | 2017-08-01 | 2017-08-08 |  | 63d |  | finish no earlier than 2017-06-05 | Rosa R. | 48h |
| 455 | 4.7.5.1.2.4 | Deliver market Sign-in Sheet(s) & Wording for Digital Sign-in |  | 6d | 2017-08-01 | 2017-08-08 |  | 63d |  | finish no earlier than 2017-06-05 | Rosa R. | 48h |
| 456 | 4.7.5.2 | **Planning** |  | 10d | 2017-07-06 | 2017-07-19 | 89SS-25d | 0d |  |  |  | 120h |
| 457 | 4.7.5.2.1 | Confirm Market CM & Comm plan |  | 10d | 2017-07-06 | 2017-07-19 |  | 0d |  | start no earlier than 2017-04-17 | Rosa R. | 80h |
| 458 | 4.7.5.2.2 | Develop Cutover Plan |  | 5d | 2017-07-06 | 2017-07-12 |  | 82d |  | start no earlier than 2017-05-01 | Rosa R. | 40h |

Notes:
- 450: Waiman - I can't fix the timeline
- 458: activities will stay in the tool they started in. New items in new tool

| ID | WBS | Task | Duration | Start | Finish | Predecessors | Total slack | Free slack | Constraint | Resources | Work |
| --- | --- | --- | --- | --- | --- | --- | --- | --- | --- | --- | --- |
| 459 | 4.7.5.3 | **HCP Process Confirmation** | 24d | 2017-07-06 | 2017-08-08 | 89SS-25d | 63d |  |  | Rosa R. | 384h |
| 460 | 4.7.5.3.1 | Demo of Core tool | 7d | 2017-07-06 | 2017-07-14 |  | 63d | 0d | start no earlier than 2017-04-22 | Rosa R. | 56h |
| 461 | 4.7.5.3.2 | Market Processes defined / Documented | 15d | 2017-07-17 | 2017-08-04 | 460 | 63d | 0d | start no earlier than 2017-04-19 | Market | 120h |
| 462 | 4.7.5.3.3 | HCP Process Confirmation | 2d | 2017-08-07 | 2017-08-08 | 461 | 63d |  |  | Rosa R. | 16h |
| 463 | 4.7.5.4 | **UFT** | 30d | 2017-06-29 | 2017-08-09 |  | 62d |  |  |  | 1136h |
| 464 | 4.7.5.4.1 | **UFT Preparation** | 22d | 2017-06-29 | 2017-07-28 |  | 70d |  |  |  | 1048h |
| 465 | 4.7.5.4.1.1 | **UFT Logistics** | 8d | 2017-07-13 | 2017-07-24 | 477SS-15d | 74d |  |  | Market; Rosa R. | 768h |
| 466 | 4.7.5.4.1.1.1 | Confirm Participants | 8d | 2017-07-13 | 2017-07-24 |  | 74d |  | start no earlier than 2017-04-10 | Market; Rosa R. | 128h |
| 467 | 4.7.5.4.1.1.2 | Confirm IT support | 8d | 2017-07-13 | 2017-07-24 |  | 74d |  | start no earlier than 2017-04-10 | Market; Rosa R. | 128h |
| 468 | 4.7.5.4.1.1.3 | Confirm location | 8d | 2017-07-13 | 2017-07-24 |  | 74d |  | start no earlier than 2017-04-10 | Market; Rosa R. | 128h |
| 469 | 4.7.5.4.1.1.4 | Confirm Hardware | 8d | 2017-07-13 | 2017-07-24 |  | 74d |  | start no earlier than 2017-04-10 | Market; Rosa R. | 128h |
| 470 | 4.7.5.4.1.1.5 | Schedule UFT Sessions | 8d | 2017-07-13 | 2017-07-24 |  | 74d |  | start no earlier than 2017-04-10 | Market; Rosa R. | 128h |
| 471 | 4.7.5.4.1.2 | Prep UFT Environment (including data prep) | 3d | 2017-06-29 | 2017-07-03 | 477SS-25d | 89d |  | start no earlier than 2017-04-19 | Michelle F. | 24h |
| 472 | 4.7.5.4.1.3 | Develop UFT Use case Scenarios | 10d | 2017-06-29 | 2017-07-12 | 477SS-25d | 70d | 0d | start no earlier than 2017-04-21 | Shaheen | 80h |
| 473 | 4.7.5.4.1.4 | Demo Core Scripts to GPO Leads | 1d | 2017-07-13 | 2017-07-13 | 472 | 70d | 0d | start no earlier than 2017-05-01 | Shaheen | 8h |
| 474 | 4.7.5.4.1.5 | Demo Core Scripts to Market Leads | 1d | 2017-07-14 | 2017-07-14 | 473 | 70d | 0d | start no earlier than 2017-05-02 | Rosa R. | 8h |
| 475 | 4.7.5.4.1.6 | Test Script Prep | 10d | 2017-07-17 | 2017-07-28 | 474 | 70d |  | start no earlier than 2017-05-01 | Market; Rosa R. | 160h |
| 476 | 4.7.5.4.2 | UFT Training (Demo, Tools & UFT process) | 1d | 2017-08-03 | 2017-08-03 | 477SS | 66d |  |  | Diane O. | 8h |
| 477 | 4.7.5.4.3 | UFT Execution | 5d | 2017-08-03 | 2017-08-09 | 89SS-5d | 50d | 0d | start no earlier than 2017-05-22 | Diane O.; Market | 80h |
| 478 | 4.7.5.5 | **Training** | 57d | 2017-06-15 | 2017-09-01 | 89SS-40d | 45d |  |  |  | 1392h |
| 479 | 4.7.5.5.1 | Confirm Market Training Plan | 8d | 2017-06-15 | 2017-06-26 |  | 64d | 0d | finish no earlier than 2017-04-25 | Rosa R. | 64h |
| 480 | 4.7.5.5.2 | Determine date for HO training | 5d | 2017-06-15 | 2017-06-21 |  | 97d |  | start no earlier than 2017-04-12 | Rosa R. | 40h |
| 481 | 4.7.5.5.3 | Determine date for Field training | 5d | 2017-06-15 | 2017-06-21 |  | 97d |  | start no earlier than 2017-04-12 | Rosa R. | 40h |
| 482 | 4.7.5.5.4 | Load training data | 1d | 2017-06-15 | 2017-06-15 |  | 101d |  |  | IT | 8h |

Notes:
- 472: Diane - 4/10

| ID | WBS | Task | Type | Duration | Start | Finish | Predecessors | Total slack | Free slack | Constraint | Resources | Work |
| --- | --- | --- | --- | --- | --- | --- | --- | --- | --- | --- | --- | --- |
| 483 | 4.7.5.5.5 | **Localize training materials** |  | 12d | 2017-06-15 | 2017-06-30 |  | 55d | 0d |  | Market; Marie C. B. | 720h |
| 484 | 4.7.5.5.5.1 | Quick Reference Guides |  | 8d | 2017-06-15 | 2017-06-26 |  | 59d |  |  | Market; Rosa R. | 128h |
| 485 | 4.7.5.5.5.2 | Event Owner Browser |  | 8d | 2017-06-15 | 2017-06-26 |  | 59d |  |  | Market; Rosa R. | 128h |
| 486 | 4.7.5.5.5.3 | Service Coordinator |  | 5d | 2017-06-15 | 2017-06-21 |  | 62d |  |  | Market; Rosa R. | 80h |
| 487 | 4.7.5.5.5.4 | Event Owner Ipad - Confirmation |  | 12d | 2017-06-15 | 2017-06-30 |  | 55d |  |  | Market; Rosa R. | 192h |
| 488 | 4.7.5.5.6 | Final updates incorporating localization |  | 15d | 2017-07-03 | 2017-07-21 | 483 | 55d | 0d |  | Maribel R. | 120h |
| 489 | 4.7.5.5.7 | Translation of training materials | milestone | 0d | 2017-07-21 | 2017-07-21 | 488 | 55d | 0d |  | Market |  |
| 490 | 4.7.5.5.8 | Training materials complete | milestone | 0d | 2017-07-21 | 2017-07-21 | 489 | 55d | 0d |  |  |  |
| 491 | 4.7.5.5.9 | **Training Scheduling and Logistics** |  | 25d | 2017-06-27 | 2017-07-31 |  | 64d |  |  |  | 160h |
| 492 | 4.7.5.5.9.1 | Identify trainers |  | 10d | 2017-06-27 | 2017-07-10 | 479 | 64d | 9d |  | Rosa R. | 80h |
| 493 | 4.7.5.5.9.2 | Finalize # of sessions and participants |  | 5d | 2017-06-27 | 2017-07-03 | 479 | 89d |  | start no earlier than 2016-05-23 | Rosa R. | 40h |
| 494 | 4.7.5.5.9.3 | Reserve training rooms |  | 5d | 2017-07-24 | 2017-07-28 | 502SS-15d | 70d |  | start no earlier than 2016-06-13 | Rosa R. | 40h |
| 495 | 4.7.5.5.9.4 | **Notify participants** |  | 11d | 2017-07-17 | 2017-07-31 |  | 69d |  |  |  |  |
| 496 | 4.7.5.5.9.4.1 | EMCoE |  | 1d | 2017-07-31 | 2017-07-31 | 503SS-10d | 69d |  |  |  |  |
| 497 | 4.7.5.5.9.4.2 | Field users |  | 1d | 2017-07-17 | 2017-07-17 | 505SS-20d | 79d |  |  |  |  |
| 498 | 4.7.5.5.9.4.3 | Home Office |  | 1d | 2017-07-17 | 2017-07-17 | 504SS-20d | 79d |  |  |  |  |
| 499 | 4.7.5.5.10 | **Training Delivery** |  | 30d | 2017-07-24 | 2017-09-01 | 490 | 45d |  |  |  | 240h |
| 500 | 4.7.5.5.10.1 | Train the Trainer |  | 5d | 2017-07-24 | 2017-07-28 | 492 | 55d | 0d | start no earlier than 2017-05-22 | Maribel R. | 40h |
| 501 | 4.7.5.5.10.2 | Trainer Prep |  | 10d | 2017-07-31 | 2017-08-11 | 500 | 55d | 0d |  | Market | 80h |
| 502 | 4.7.5.5.10.3 | **Deliver User training** |  | 5d | 2017-08-14 | 2017-08-18 | 92SS-5d, 501 | 55d | 0d |  | Market | 40h |
| 503 | 4.7.5.5.10.3.1 | EMCOE (EO & SC) |  | 5d | 2017-08-14 | 2017-08-18 |  | 55d | 0d | start no earlier than 2017-05-30 |  |  |
| 504 | 4.7.5.5.10.3.2 | Home Office |  | 5d | 2017-08-14 | 2017-08-18 |  | 55d | 0d |  |  |  |
| 505 | 4.7.5.5.10.3.3 | Field users |  | 5d | 2017-08-14 | 2017-08-18 |  | 55d | 0d | start no earlier than 2017-06-08 |  |  |
| 506 | 4.7.5.5.10.4 | Training Complete | milestone | 0d | 2017-08-18 | 2017-08-18 | 502 | 45d | 0d |  |  |  |
| 507 | 4.7.5.5.10.5 | Training sustainment |  | 10d | 2017-08-21 | 2017-09-01 | 506 | 45d |  |  | Market | 80h |

Notes:
- 483: Dependent on what additional changes Core needs to make
- 495: When do we train the trainer?
- 502: 4 markets

| ID | WBS | Task | Type | Duration | Start | Finish | Predecessors | Total slack | Free slack | Constraint | Resources | Work |
| --- | --- | --- | --- | --- | --- | --- | --- | --- | --- | --- | --- | --- |
| 508 | 4.7.5.6 | **Communications & change Management** |  | 33d | 2017-07-06 | 2017-08-21 |  | 54d |  |  |  | 264h |
| 509 | 4.7.5.6.1 | Execute Communications & CM plan |  | 33d | 2017-07-06 | 2017-08-21 | 457SS | 54d |  |  | Market | 264h |
| 510 | 4.7.5.7 | **Logistics provider** |  | 0d? | 2017-03-15 | 2017-03-15 |  | 0d |  |  |  |  |
| 511 | 4.7.5.7.1 | Logistics provider - change management | manual | 1d? | 2017-03-15 | 2017-03-15 |  |  |  |  |  |  |
| 512 | 4.7.5.7.2 | Logistics provider - Training | manual | 1d? | 2017-03-15 | 2017-03-15 |  |  |  |  |  |  |
| 513 | 4.7.5.8 | **Market Post Go-Live** |  | 10d | 2017-08-21 | 2017-09-01 | 92 | 45d |  |  |  | 96h |
| 514 | 4.7.5.8.1 | Setup Budgets (Needs) & communicate to users |  | 2d | 2017-08-21 | 2017-08-22 |  | 53d |  | start no earlier than 2017-04-13 | Rosa R. | 16h |
| 515 | 4.7.5.8.2 | HyperCare Period |  | 10d | 2017-08-21 | 2017-09-01 |  | 45d | 0d | start no earlier than 2017-06-15 | Daniel B. | 80h |
| 516 | 4.7.5.8.3 | Operational Support Begins | milestone | 0d | 2017-09-01 | 2017-09-01 | 515 | 45d |  | start no earlier than 2017-07-21 | Rosa R. |  |
| 517 | 4.7.6 | **Brazil** |  | 118d? | 2017-03-15 | 2017-08-25 |  | 0d |  |  |  | 4408h |
| 518 | 4.7.6.1 | **Market Data Preparation** |  | 34d | 2017-06-05 | 2017-07-20 |  | 76d |  |  |  | 552h |
| 519 | 4.7.6.1.1 | **Provide starter data for EU full for SIT testing** |  | 10d | 2017-06-05 | 2017-06-16 | 101SS-45d | 100d |  |  | Diane O. | 352h |
| 520 | 4.7.6.1.1.1 | GPO to provide templates to market | milestone | 0d | 2017-06-05 | 2017-06-05 |  | 102d | 0d |  | Diane O.; IT |  |
| 521 | 4.7.6.1.1.2 | Deliver populated HCP Pool template |  | 8d | 2017-06-05 | 2017-06-14 | 520 | 102d |  |  | Diane O. | 64h |
| 522 | 4.7.6.1.1.3 | Deliver populated Venue list template |  | 8d | 2017-06-05 | 2017-06-14 | 520 | 102d |  |  | Diane O. | 64h |
| 523 | 4.7.6.1.1.4 | Deliver populated User Definition Template populated and Hierarchy for non-CRM users |  | 8d | 2017-06-05 | 2017-06-14 | 520 | 102d |  |  | Diane O. | 64h |
| 524 | 4.7.6.1.1.5 | GPO provide Sign-in Sheet sample |  | 10d | 2017-06-05 | 2017-06-16 |  | 100d | 0d | start no earlier than 2017-04-17 | Diane O. | 80h |
| 525 | 4.7.6.1.1.6 | Deliver Market Sign-in Sheet(s) & wording for Digital Sign-in | milestone | 0d | 2017-06-16 | 2017-06-16 | 524 | 100d |  |  |  |  |
| 526 | 4.7.6.1.2 | **Deliver production ready business dataset** |  | 5d | 2017-07-14 | 2017-07-20 | 98SS-6d | 76d |  |  | Diane O. | 200h |
| 527 | 4.7.6.1.2.1 | Deliver populated HCP Pool template |  | 5d | 2017-07-14 | 2017-07-20 |  | 76d |  | start no earlier than 2017-06-05 | Diane O. | 40h |
| 528 | 4.7.6.1.2.2 | Deliver populated Venue list template |  | 5d | 2017-07-14 | 2017-07-20 |  | 76d |  | finish no earlier than 2017-06-05 | Diane O. | 40h |
| 529 | 4.7.6.1.2.3 | Deliver populated User Definition Template populated and Hierarchy for non-CRM users |  | 5d | 2017-07-14 | 2017-07-20 |  | 76d |  | finish no earlier than 2017-06-05 | Diane O. | 40h |
| 530 | 4.7.6.1.2.4 | Deliver market Sign-in Sheet(s) & Wording for Digital Sign-in |  | 5d | 2017-07-14 | 2017-07-20 |  | 76d |  | finish no earlier than 2017-06-05 | Diane O. | 40h |
| 531 | 4.7.6.2 | **Planning** |  | 10d | 2017-06-05 | 2017-06-16 | 101SS-45d | 65d |  |  |  | 120h |
| 532 | 4.7.6.2.1 | Confirm Market CM & Comm plan |  | 10d | 2017-06-05 | 2017-06-16 |  | 65d | 0d | start no earlier than 2017-04-17 | Diane O. | 80h |
| 533 | 4.7.6.2.2 | Develop Cutover Plan |  | 5d | 2017-06-05 | 2017-06-09 |  | 105d |  | start no earlier than 2017-05-01 | Diane O. | 40h |

Notes:
- 519: Not required
- 525: Waiman - I can't fix the timeline
- 533: activities will stay in the tool they started in. New items in new tool

| ID | WBS | Task | Duration | Start | Finish | Predecessors | Total slack | Free slack | Constraint | Resources | Work |
| --- | --- | --- | --- | --- | --- | --- | --- | --- | --- | --- | --- |
| 534 | 4.7.6.3 | **HCP Process Confirmation** | 24d | 2017-06-05 | 2017-07-06 | 101SS-45d | 86d |  |  | Diane O. | 504h |
| 535 | 4.7.6.3.1 | Demo of Core tool | 7d | 2017-06-05 | 2017-06-13 |  | 86d | 0d | start no earlier than 2017-04-22 | Diane O. | 56h |
| 536 | 4.7.6.3.2 | Market Processes defined / Documented | 15d | 2017-06-14 | 2017-07-04 | 535 | 86d | 0d | start no earlier than 2017-04-19 | Market; Diane O. | 240h |
| 537 | 4.7.6.3.3 | HCP Process Confirmation | 2d | 2017-07-05 | 2017-07-06 | 536 | 86d |  |  | Diane O. | 16h |
| 538 | 4.7.6.4 | **System Translation Activities** | 14d | 2017-06-15 | 2017-07-04 |  | 63d |  |  |  | 184h |
| 539 | 4.7.6.4.1 | Provide market fields that may need to be translated | 3d | 2017-06-15 | 2017-06-19 | 101SS-37d | 63d | 0d |  | IT | 24h |
| 540 | 4.7.6.4.2 | Translate all required fields | 9d | 2017-06-20 | 2017-06-30 | 539 | 63d | 0d |  | Market; Diane O. | 144h |
| 541 | 4.7.6.4.3 | Update environments with translated fields | 2d | 2017-07-03 | 2017-07-04 | 540 | 63d | 0d |  | IT | 16h |
| 542 | 4.7.6.5 | **UFT** | 30d | 2017-06-12 | 2017-07-21 |  | 75d |  |  |  | 1184h |
| 543 | 4.7.6.5.1 | **UFT Preparation** | 25d | 2017-06-12 | 2017-07-14 |  | 80d |  |  |  | 1096h |
| 544 | 4.7.6.5.1.1 | **UFT Logistics** | 8d | 2017-06-26 | 2017-07-05 | 556SS-15d | 87d |  |  | Market; Diane O. | 768h |
| 545 | 4.7.6.5.1.1.1 | Confirm Participants | 8d | 2017-06-26 | 2017-07-05 |  | 87d |  | start no earlier than 2017-04-10 | Market; Diane O. | 128h |
| 546 | 4.7.6.5.1.1.2 | Confirm IT support | 8d | 2017-06-26 | 2017-07-05 |  | 87d |  | start no earlier than 2017-04-10 | Market; Diane O. | 128h |
| 547 | 4.7.6.5.1.1.3 | Confirm location | 8d | 2017-06-26 | 2017-07-05 |  | 87d |  | start no earlier than 2017-04-10 | Market; Diane O. | 128h |
| 548 | 4.7.6.5.1.1.4 | Confirm Hardware | 8d | 2017-06-26 | 2017-07-05 |  | 87d |  | start no earlier than 2017-04-10 | Market; Diane O. | 128h |
| 549 | 4.7.6.5.1.1.5 | Schedule UFT Sessions | 8d | 2017-06-26 | 2017-07-05 |  | 87d |  | start no earlier than 2017-04-10 | Market; Diane O. | 128h |
| 550 | 4.7.6.5.1.2 | Prep UFT Environment (including data prep) | 3d | 2017-06-21 | 2017-06-23 | 556SS-18d | 95d |  | start no earlier than 2017-04-19 | Michelle F. | 24h |
| 551 | 4.7.6.5.1.3 | Develop UFT Use case Scenarios | 10d | 2017-06-12 | 2017-06-23 | 556SS-25d | 80d | 0d | start no earlier than 2017-04-21 | Shaheen | 80h |
| 552 | 4.7.6.5.1.4 | Demo Core Scripts to GPO Leads | 1d | 2017-06-26 | 2017-06-26 | 551 | 80d | 0d | start no earlier than 2017-05-01 | Shaheen | 8h |
| 553 | 4.7.6.5.1.5 | Demo Core Scripts to Market Leads | 1d | 2017-06-27 | 2017-06-27 | 552 | 80d | 0d | start no earlier than 2017-05-02 | Diane O. | 8h |
| 554 | 4.7.6.5.1.6 | Test Script Prep | 13d | 2017-06-28 | 2017-07-14 | 553 | 80d |  | start no earlier than 2017-05-01 | Market; Diane O. | 208h |
| 555 | 4.7.6.5.2 | UFT Training (Demo, Tools & UFT process) | 1d | 2017-07-17 | 2017-07-17 | 556SS | 79d |  |  | Diane O. | 8h |
| 556 | 4.7.6.5.3 | UFT Execution (incl. EM 1.x regression) | 5d | 2017-07-17 | 2017-07-21 | 95, 98SS-5d | 60d | 0d | start no earlier than 2017-05-22 | Diane O.; Market | 80h |
| 557 | 4.7.6.6 | **Training** | 67d | 2017-05-25 | 2017-08-25 | 101SS-52d | 50d |  |  |  | 1728h |
| 558 | 4.7.6.6.1 | Confirm Market Training Plan | 9d | 2017-05-25 | 2017-06-06 |  | 80d | 0d | finish no earlier than 2017-04-25 | Diane O. | 72h |
| 559 | 4.7.6.6.2 | Determine date for HO training | 5d | 2017-05-25 | 2017-05-31 |  | 112d |  | start no earlier than 2017-04-12 | Diane O. | 40h |
| 560 | 4.7.6.6.3 | Determine date for Field training | 5d | 2017-05-25 | 2017-05-31 |  | 112d |  | start no earlier than 2017-04-12 | Diane O. | 40h |

Notes:
- 539: Veeva
- 551: Diane - 4/10

| ID | WBS | Task | Type | Duration | Start | Finish | Predecessors | Total slack | Free slack | Constraint | Resources | Work |
| --- | --- | --- | --- | --- | --- | --- | --- | --- | --- | --- | --- | --- |
| 561 | 4.7.6.6.4 | **Localize training materials** |  | 10d | 2017-05-25 | 2017-06-07 |  | 65d | 0d |  | Market; Diane O. | 800h |
| 562 | 4.7.6.6.4.1 | Quick Reference Guides |  | 10d | 2017-05-25 | 2017-06-07 |  | 65d |  | start no earlier than 2017-05-03 | Market; Diane O. | 160h |
| 563 | 4.7.6.6.4.2 | Event Owner Browser |  | 10d | 2017-05-25 | 2017-06-07 |  | 65d |  | start no earlier than 2017-05-03 | Market; Diane O. | 160h |
| 564 | 4.7.6.6.4.3 | Service Coordinator |  | 10d | 2017-05-25 | 2017-06-07 |  | 65d |  | start no earlier than 2017-05-08 | Market; Diane O. | 160h |
| 565 | 4.7.6.6.4.4 | Event Owner Ipad - Confirmation |  | 10d | 2017-05-25 | 2017-06-07 |  | 65d |  | start no earlier than 2017-05-08 | Market; Diane O. | 160h |
| 566 | 4.7.6.6.5 | Final updates incorporating localization |  | 9d | 2017-06-08 | 2017-06-20 | 561 | 65d | 0d |  | Maribel R. | 72h |
| 567 | 4.7.6.6.6 | Translation of training materials |  | 8d | 2017-06-21 | 2017-06-30 | 566 | 65d | 2d |  | Market | 64h |
| 568 | 4.7.6.6.7 | Finalize training materials |  | 7d | 2017-07-05 | 2017-07-13 | 567, 541 | 63d | 0d |  | Maribel R. | 56h |
| 569 | 4.7.6.6.8 | Training materials complete | milestone | 0d | 2017-07-13 | 2017-07-13 | 568 | 63d | 0d |  |  |  |
| 570 | 4.7.6.6.9 | **Training Scheduling and Logistics** |  | 31d | 2017-06-07 | 2017-07-19 |  | 77d |  |  |  | 336h |
| 571 | 4.7.6.6.9.1 | Identify trainers |  | 10d | 2017-06-07 | 2017-06-20 | 558 | 80d | 17d |  | Diane O. | 80h |
| 572 | 4.7.6.6.9.2 | Finalize # of sessions and participants |  | 5d | 2017-06-07 | 2017-06-13 | 558 | 103d |  | start no earlier than 2016-05-23 | Diane O. | 40h |
| 573 | 4.7.6.6.9.3 | Reserve training rooms |  | 5d | 2017-07-12 | 2017-07-18 | 581SS-15d | 78d |  | start no earlier than 2016-06-13 | Diane O. | 40h |
| 574 | 4.7.6.6.9.4 | **Notify participants** |  | 11d | 2017-07-05 | 2017-07-19 |  | 77d |  |  | Diane O.; Market | 176h |
| 575 | 4.7.6.6.9.4.1 | EMCoE |  | 1d | 2017-07-19 | 2017-07-19 | 582SS-10d | 77d |  |  |  |  |
| 576 | 4.7.6.6.9.4.2 | Field users |  | 1d | 2017-07-10 | 2017-07-10 | 584SS-20d | 84d |  |  |  |  |
| 577 | 4.7.6.6.9.4.3 | Home Office |  | 1d | 2017-07-05 | 2017-07-05 | 583SS-20d | 87d |  |  |  |  |
| 578 | 4.7.6.6.10 | **Training Delivery** |  | 31d | 2017-07-14 | 2017-08-25 | 569 | 50d |  |  |  | 248h |
| 579 | 4.7.6.6.10.1 | Train the Trainer |  | 5d | 2017-07-14 | 2017-07-20 | 571 | 63d | 0d | start no earlier than 2017-05-22 | Maribel R. | 40h |
| 580 | 4.7.6.6.10.2 | Trainer Prep |  | 8d | 2017-07-21 | 2017-08-01 | 579 | 63d | 0d |  | Market | 64h |
| 581 | 4.7.6.6.10.3 | **Deliver User training** |  | 8d | 2017-08-02 | 2017-08-11 | 580 | 60d | 0d |  | Market | 64h |
| 582 | 4.7.6.6.10.3.1 | EMCOE (EO & SC) |  | 5d | 2017-08-02 | 2017-08-08 | 101SS-5d | 63d | 0d | start no earlier than 2017-05-30 |  |  |
| 583 | 4.7.6.6.10.3.2 | Home Office |  | 5d | 2017-08-02 | 2017-08-08 |  | 63d | 0d |  |  |  |
| 584 | 4.7.6.6.10.3.3 | Field users |  | 5d | 2017-08-07 | 2017-08-11 | 101SS | 60d | 0d | start no earlier than 2017-06-08 |  |  |
| 585 | 4.7.6.6.10.4 | Training Complete | milestone | 0d | 2017-08-11 | 2017-08-11 | 581 | 50d | 0d |  |  |  |
| 586 | 4.7.6.6.10.5 | Training sustainment |  | 10d | 2017-08-14 | 2017-08-25 | 585 | 50d |  |  | Market | 80h |

Notes:
- 561: Dependent on what additional changes Core needs to make
- 574: When do we train the trainer?

| ID | WBS | Task | Type | Duration | Start | Finish | Predecessors | Complete | Remaining | Total slack | Free slack | Constraint | Resources | Work | Actual work |
| --- | --- | --- | --- | --- | --- | --- | --- | --- | --- | --- | --- | --- | --- | --- | --- |
| 587 | 4.7.6.7 | **Communications & change Management** |  | 35d | 2017-06-19 | 2017-08-04 |  |  |  | 65d |  |  |  |  |  |
| 588 | 4.7.6.7.1 | Execute Communications & CM plan |  | 35d | 2017-06-19 | 2017-08-04 | 532 |  |  | 65d |  |  |  |  |  |
| 589 | 4.7.6.8 | **Logistics provider** |  | 0d? | 2017-03-15 | 2017-03-15 |  |  |  | 0d |  |  |  |  |  |
| 590 | 4.7.6.8.1 | Logistics provider - change management | manual | 1d? | 2017-03-15 | 2017-03-15 |  |  |  |  |  |  |  |  |  |
| 591 | 4.7.6.8.2 | Logistics provider - Training | manual | 1d? | 2017-03-15 | 2017-03-15 |  |  |  |  |  |  |  |  |  |
| 592 | 4.7.6.9 | **Market Post Go-Live** |  | 15d | 2017-08-07 | 2017-08-25 | 101 |  |  | 50d |  |  |  | 136h |  |
| 593 | 4.7.6.9.1 | Setup Budgets (Needs) & communicate to users |  | 2d | 2017-08-07 | 2017-08-08 |  |  |  | 63d |  | start no earlier than 2017-04-13 | Diane O. | 16h |  |
| 594 | 4.7.6.9.2 | HyperCare Period |  | 15d | 2017-08-07 | 2017-08-25 |  |  |  | 50d | 0d | start no earlier than 2017-06-15 | Daniel B. | 120h |  |
| 595 | 4.7.6.9.3 | Operational Support Begins | milestone | 0d | 2017-08-25 | 2017-08-25 | 594 |  |  | 50d |  | start no earlier than 2017-07-21 |  |  |  |
| 596 | 4.7.7 | **Canada** |  | 168d? | 2017-03-15 A | 2017-11-03 |  | 2% | 165.18d? | 0d |  |  |  | 4880h | 112h |
| 597 | 4.7.7.1 | **Market Data Preparation** |  | 38d | 2017-08-07 | 2017-09-27 |  |  |  | 27d |  |  |  | 552h |  |
| 598 | 4.7.7.1.1 | **Provide starter data for SIT testing** |  | 10d | 2017-08-07 | 2017-08-18 | 126SS-50d |  |  | 55d |  |  | Diane O. | 352h |  |
| 599 | 4.7.7.1.1.1 | GPO to provide templates to market | milestone | 0d | 2017-08-07 | 2017-08-07 |  |  |  | 57d | 0d |  | Diane O.; IT |  |  |
| 600 | 4.7.7.1.1.2 | Deliver populated HCP Pool template |  | 8d | 2017-08-07 | 2017-08-16 | 599 |  |  | 57d |  |  | Diane O. | 64h |  |
| 601 | 4.7.7.1.1.3 | Deliver populated Venue list template |  | 8d | 2017-08-07 | 2017-08-16 | 599 |  |  | 57d |  |  | Diane O. | 64h |  |
| 602 | 4.7.7.1.1.4 | Deliver populated User Definition Template populated and Hierarchy for non-CRM users |  | 8d | 2017-08-07 | 2017-08-16 | 599 |  |  | 57d |  |  | Diane O. | 64h |  |
| 603 | 4.7.7.1.1.5 | GPO provide Sign-in Sheet sample |  | 10d | 2017-08-07 | 2017-08-18 |  |  |  | 55d | 0d | start no earlier than 2017-04-17 | Diane O. | 80h |  |
| 604 | 4.7.7.1.1.6 | Deliver Market Sign-in Sheet(s) & wording for Digital Sign-in | milestone | 0d | 2017-08-18 | 2017-08-18 | 603 |  |  | 55d |  |  |  |  |  |
| 605 | 4.7.7.1.2 | **Deliver production ready business dataset** |  | 5d | 2017-09-21 | 2017-09-27 | 123SS-6d |  |  | 27d |  |  | Diane O. | 200h |  |
| 606 | 4.7.7.1.2.1 | Deliver populated HCP Pool template |  | 5d | 2017-09-21 | 2017-09-27 |  |  |  | 27d |  | start no earlier than 2017-06-05 | Diane O. | 40h |  |
| 607 | 4.7.7.1.2.2 | Deliver populated Venue list template |  | 5d | 2017-09-21 | 2017-09-27 |  |  |  | 27d |  | finish no earlier than 2017-06-05 | Diane O. | 40h |  |
| 608 | 4.7.7.1.2.3 | Deliver populated User Definition Template populated and Hierarchy for non-CRM users |  | 5d | 2017-09-21 | 2017-09-27 |  |  |  | 27d |  | finish no earlier than 2017-06-05 | Diane O. | 40h |  |
| 609 | 4.7.7.1.2.4 | Deliver market Sign-in Sheet(s) & Wording for Digital Sign-in |  | 5d | 2017-09-21 | 2017-09-27 |  |  |  | 27d |  | finish no earlier than 2017-06-05 | Diane O. | 40h |  |
| 610 | 4.7.7.2 | **Planning** |  | 10d | 2017-08-07 | 2017-08-18 | 126SS-50d |  |  | 15d |  |  |  | 120h |  |
| 611 | 4.7.7.2.1 | Confirm Market CM & Comm plan |  | 10d | 2017-08-07 | 2017-08-18 |  |  |  | 15d | 0d | start no earlier than 2017-04-17 | Diane O. | 80h |  |
| 612 | 4.7.7.2.2 | Develop Cutover Plan |  | 5d | 2017-08-07 | 2017-08-11 |  |  |  | 60d |  | start no earlier than 2017-05-01 | Diane O. | 40h |  |

Notes:
- 604: Waiman - I can't fix the timeline
- 612: activities will stay in the tool they started in. New items in new tool

| ID | WBS | Task | Duration | Start | Finish | Predecessors | Complete | Remaining | Total slack | Free slack | Constraint | Resources | Work | Actual work |
| --- | --- | --- | --- | --- | --- | --- | --- | --- | --- | --- | --- | --- | --- | --- |
| 613 | 4.7.7.3 | **HCP Process Confirmation** | 24d | 2017-08-07 A | 2017-09-07 | 126SS-50d | 29% | 17d | 41d |  |  | Diane O. | 504h | 112h |
| 614 | 4.7.7.3.1 | Demo of Core tool | 7d | 2017-08-07 A | 2017-08-15 A |  | 100% |  |  |  | start no earlier than 2017-04-22 | Diane O. | 56h | 56h |
| 615 | 4.7.7.3.2 | Market Processes defined / Documented | 15d | 2017-08-16 | 2017-09-05 | 614 |  |  | 41d | 0d | start no earlier than 2017-04-19 | Market; Diane O. | 240h |  |
| 616 | 4.7.7.3.3 | HCP Process Confirmation | 2d | 2017-09-06 | 2017-09-07 | 615 |  |  | 41d |  |  | Diane O. | 16h |  |
| 617 | 4.7.7.4 | **System Translation Activities** | 22d | 2017-08-07 | 2017-09-05 |  |  |  | 20d |  |  |  | 296h |  |
| 618 | 4.7.7.4.1 | Provide market fields for translation | 5d | 2017-08-07 | 2017-08-11 | 126SS-50d |  |  | 20d | 0d |  | IT | 40h |  |
| 619 | 4.7.7.4.2 | Translate all system required fields | 15d | 2017-08-14 | 2017-09-01 | 618 |  |  | 20d | 0d |  | Market; Diane O. | 240h |  |
| 620 | 4.7.7.4.3 | Update environments with translated fields | 2d | 2017-09-04 | 2017-09-05 | 619 |  |  | 20d | 0d |  | IT | 16h |  |
| 621 | 4.7.7.5 | **UFT** | 35d | 2017-08-11 | 2017-09-28 |  |  |  | 26d |  |  |  | 1264h |  |
| 622 | 4.7.7.5.1 | **UFT Preparation** | 25d | 2017-08-11 | 2017-09-14 |  |  |  | 36d |  |  |  | 1096h |  |
| 623 | 4.7.7.5.1.1 | **UFT Logistics** | 8d | 2017-08-25 | 2017-09-05 | 635SS-15d |  |  | 43d |  |  | Market; Diane O. | 768h |  |
| 624 | 4.7.7.5.1.1.1 | Confirm Participants | 8d | 2017-08-25 | 2017-09-05 |  |  |  | 43d |  | start no earlier than 2017-04-10 | Market; Diane O. | 128h |  |
| 625 | 4.7.7.5.1.1.2 | Confirm IT support | 8d | 2017-08-25 | 2017-09-05 |  |  |  | 43d |  | start no earlier than 2017-04-10 | Market; Diane O. | 128h |  |
| 626 | 4.7.7.5.1.1.3 | Confirm location | 8d | 2017-08-25 | 2017-09-05 |  |  |  | 43d |  | start no earlier than 2017-04-10 | Market; Diane O. | 128h |  |
| 627 | 4.7.7.5.1.1.4 | Confirm Hardware | 8d | 2017-08-25 | 2017-09-05 |  |  |  | 43d |  | start no earlier than 2017-04-10 | Market; Diane O. | 128h |  |
| 628 | 4.7.7.5.1.1.5 | Schedule UFT Sessions | 8d | 2017-08-25 | 2017-09-05 |  |  |  | 43d |  | start no earlier than 2017-04-10 | Market; Diane O. | 128h |  |
| 629 | 4.7.7.5.1.2 | Prep UFT Environment (including data prep) | 3d | 2017-08-11 | 2017-08-15 | 635SS-25d |  |  | 58d |  | start no earlier than 2017-04-19 | Michelle F. | 24h |  |
| 630 | 4.7.7.5.1.3 | Develop UFT Use case Scenarios | 10d | 2017-08-11 | 2017-08-24 | 635SS-25d |  |  | 36d | 0d | start no earlier than 2017-04-21 | Shaheen | 80h |  |
| 631 | 4.7.7.5.1.4 | Demo Core Scripts to GPO Leads | 1d | 2017-08-25 | 2017-08-25 | 630 |  |  | 36d | 0d | start no earlier than 2017-05-01 | Shaheen | 8h |  |
| 632 | 4.7.7.5.1.5 | Demo Core Scripts to Market Leads | 1d | 2017-08-28 | 2017-08-28 | 631 |  |  | 36d | 0d | start no earlier than 2017-05-02 | Diane O. | 8h |  |
| 633 | 4.7.7.5.1.6 | Test Script Prep | 13d | 2017-08-29 | 2017-09-14 | 632 |  |  | 36d |  | start no earlier than 2017-05-01 | Market; Diane O. | 208h |  |
| 634 | 4.7.7.5.2 | UFT Training (Demo, Tools & UFT process) | 1d | 2017-09-15 | 2017-09-15 | 635SS |  |  | 35d |  |  | Diane O. | 8h |  |
| 635 | 4.7.7.5.3 | UFT Execution (incl. EM 1.x regression) | 10d | 2017-09-15 | 2017-09-28 | 123SS-10d |  |  | 11d | 0d | start no earlier than 2017-05-22 | Diane O.; Market | 160h |  |
| 636 | 4.7.7.6 | **Training** | 73d | 2017-07-19 | 2017-10-27 | 126SS-63d |  |  | 5d |  |  |  | 2008h |  |
| 637 | 4.7.7.6.1 | Confirm Market Training Plan | 9d | 2017-07-19 | 2017-07-31 |  |  |  | 44d | 0d | finish no earlier than 2017-04-25 | Diane O. | 72h |  |
| 638 | 4.7.7.6.2 | Determine date for HO training | 5d | 2017-07-19 | 2017-07-25 |  |  |  | 73d |  | start no earlier than 2017-04-12 | Diane O. | 40h |  |
| 639 | 4.7.7.6.3 | Determine date for Field training | 5d | 2017-07-19 | 2017-07-25 |  |  |  | 73d |  | start no earlier than 2017-04-12 | Diane O. | 40h |  |

Notes:
- 618: Veeva
- 630: Diane - 4/10

| ID | WBS | Task | Type | Duration | Start | Finish | Predecessors | Total slack | Free slack | Constraint | Resources | Work |
| --- | --- | --- | --- | --- | --- | --- | --- | --- | --- | --- | --- | --- |
| 640 | 4.7.7.6.4 | **Localize training materials** |  | 13d | 2017-07-19 | 2017-08-04 |  | 20d | 0d |  | Market; Diane O. | 1040h |
| 641 | 4.7.7.6.4.1 | Quick Reference Guides |  | 13d | 2017-07-19 | 2017-08-04 |  | 20d |  | start no earlier than 2017-05-03 | Market; Diane O. | 208h |
| 642 | 4.7.7.6.4.2 | Event Owner Browser |  | 13d | 2017-07-19 | 2017-08-04 |  | 20d |  | start no earlier than 2017-05-03 | Market; Diane O. | 208h |
| 643 | 4.7.7.6.4.3 | Service Coordinator |  | 13d | 2017-07-19 | 2017-08-04 |  | 20d |  | start no earlier than 2017-05-08 | Market; Diane O. | 208h |
| 644 | 4.7.7.6.4.4 | Event Owner Ipad - Confirmation |  | 13d | 2017-07-19 | 2017-08-04 |  | 20d |  | start no earlier than 2017-05-08 | Market; Diane O. | 208h |
| 645 | 4.7.7.6.5 | Final updates incorporating localization |  | 10d | 2017-08-07 | 2017-08-18 | 640 | 20d | 0d |  | Maribel R. | 80h |
| 646 | 4.7.7.6.6 | Translation of training materials |  | 12d | 2017-08-21 | 2017-09-05 | 645 | 20d | 0d |  | Market | 96h |
| 647 | 4.7.7.6.7 | Finalize training materials |  | 8d | 2017-09-06 | 2017-09-15 | 620, 646 | 20d | 0d |  | Maribel R. | 64h |
| 648 | 4.7.7.6.8 | Training materials complete | milestone | 0d | 2017-09-15 | 2017-09-15 | 647 | 20d | 0d |  |  |  |
| 649 | 4.7.7.6.9 | **Training Scheduling and Logistics** |  | 40d | 2017-08-01 | 2017-09-25 |  | 29d |  |  |  | 336h |
| 650 | 4.7.7.6.9.1 | Identify trainers |  | 10d | 2017-08-01 | 2017-08-14 | 637 | 44d | 24d |  | Diane O. | 80h |
| 651 | 4.7.7.6.9.2 | Finalize # of sessions and participants |  | 5d | 2017-08-01 | 2017-08-07 | 637 | 64d |  | start no earlier than 2016-05-23 | Diane O. | 40h |
| 652 | 4.7.7.6.9.3 | Reserve training rooms |  | 5d | 2017-09-18 | 2017-09-22 | 660SS-15d | 30d |  | start no earlier than 2016-06-13 | Diane O. | 40h |
| 653 | 4.7.7.6.9.4 | **Notify participants** |  | 11d | 2017-09-11 | 2017-09-25 |  | 29d |  |  | Diane O.; Market | 176h |
| 654 | 4.7.7.6.9.4.1 | EMCoE |  | 1d | 2017-09-25 | 2017-09-25 | 661SS-10d | 29d |  |  |  |  |
| 655 | 4.7.7.6.9.4.2 | Field users |  | 1d | 2017-09-11 | 2017-09-11 | 663SS-20d | 39d |  |  |  |  |
| 656 | 4.7.7.6.9.4.3 | Home Office |  | 1d | 2017-09-11 | 2017-09-11 | 662SS-20d | 39d |  |  |  |  |
| 657 | 4.7.7.6.10 | **Training Delivery** |  | 30d | 2017-09-18 | 2017-10-27 | 648 | 5d |  |  |  | 240h |
| 658 | 4.7.7.6.10.1 | Train the Trainer |  | 5d | 2017-09-18 | 2017-09-22 | 650 | 20d | 0d | start no earlier than 2017-05-22 | Maribel R. | 40h |
| 659 | 4.7.7.6.10.2 | Trainer Prep |  | 10d | 2017-09-25 | 2017-10-06 | 658 | 20d |  |  | Market | 80h |
| 660 | 4.7.7.6.10.3 | **Deliver User training** |  | 5d | 2017-10-09 | 2017-10-13 | 126SS-5d | 15d | 0d |  | Market | 40h |
| 661 | 4.7.7.6.10.3.1 | EMCOE (EO & SC) |  | 5d | 2017-10-09 | 2017-10-13 |  | 15d | 0d | start no earlier than 2017-05-30 |  |  |
| 662 | 4.7.7.6.10.3.2 | Home Office |  | 5d | 2017-10-09 | 2017-10-13 |  | 15d | 0d |  |  |  |
| 663 | 4.7.7.6.10.3.3 | Field users |  | 5d | 2017-10-09 | 2017-10-13 |  | 15d | 0d | start no earlier than 2017-06-08 |  |  |
| 664 | 4.7.7.6.10.4 | Training Complete | milestone | 0d | 2017-10-13 | 2017-10-13 | 660 | 5d | 0d |  |  |  |
| 665 | 4.7.7.6.10.5 | Training sustainment |  | 10d | 2017-10-16 | 2017-10-27 | 664 | 5d |  |  | Market | 80h |

Notes:
- 640: Dependent on what additional changes Core needs to make
- 653: When do we train the trainer?

| ID | WBS | Task | Type | Duration | Start | Finish | Predecessors | Complete | Remaining | Total slack | Free slack | Constraint | Resources | Work | Actual work |
| --- | --- | --- | --- | --- | --- | --- | --- | --- | --- | --- | --- | --- | --- | --- | --- |
| 666 | 4.7.7.7 | **Communications & change Management** |  | 40d | 2017-08-21 | 2017-10-13 |  |  |  | 15d |  |  |  |  |  |
| 667 | 4.7.7.7.1 | Execute Communications & CM plan |  | 40d | 2017-08-21 | 2017-10-13 | 611 |  |  | 15d |  |  |  |  |  |
| 668 | 4.7.7.8 | **Logistics provider** |  | 0d? | 2017-03-15 | 2017-03-15 |  |  |  | 0d |  |  |  |  |  |
| 669 | 4.7.7.8.1 | Logistics provider - change management | manual | 1d? | 2017-03-15 | 2017-03-15 |  |  |  |  |  |  |  |  |  |
| 670 | 4.7.7.8.2 | Logistics provider - Training | manual | 1d? | 2017-03-15 | 2017-03-15 |  |  |  |  |  |  |  |  |  |
| 671 | 4.7.7.9 | **Market Post Go-Live** |  | 15d | 2017-10-16 | 2017-11-03 | 126 |  |  | 0d |  |  |  | 136h |  |
| 672 | 4.7.7.9.1 | Setup Budgets (Needs) & communicate to users |  | 2d | 2017-10-16 | 2017-10-17 |  |  |  | 13d |  | start no earlier than 2017-04-13 | Diane O. | 16h |  |
| 673 | 4.7.7.9.2 | HyperCare Period |  | 15d | 2017-10-16 | 2017-11-03 |  |  |  | 0d |  | start no earlier than 2017-06-15 | Daniel B. | 120h |  |
| 674 | 4.7.7.9.3 | Operational Support Begins | milestone | 0d | 2017-11-03 | 2017-11-03 | 673 |  |  | 0d |  | start no earlier than 2017-07-21 |  |  |  |
| 675 | 4.7.8 | **Germany - 1.X Regression and Changes** |  | 58d | 2017-03-15 A | 2017-06-02 |  | 45% | 31.9d | 110d |  |  |  | 1024h | 294.75h |
| 676 | 4.7.8.1 | Place holder for communications tasks for potential changes due to EM 2.0 |  | 35d | 2017-03-15 A | 2017-05-02 A |  | 100% |  |  |  |  | Rosa R. | 280h | 280h |
| 677 | 4.7.8.2 | **Germany UFT / Regression testing** |  | 38d | 2017-04-12 A | 2017-06-02 |  | 2% | 37.16d | 110d |  |  | Rosa R. | 744h | 14.76h |
| 678 | 4.7.8.2.1 | Receive Impact Document |  | 1d | 2017-04-12 A | 2017-04-12 A |  | 100% |  |  |  | start no earlier than 2017-04-12 | Rosa R. | 8h | 8h |
| 679 | 4.7.8.2.2 | Regression Plan Document |  | 10d | 2017-04-13 | 2017-04-26 | 678 |  |  | 115d | 0d | start no earlier than 2017-04-13 | Rosa R. | 80h |  |
| 680 | 4.7.8.2.3 | Data prep |  | 12d | 2017-04-27 | 2017-05-12 | 679 |  |  | 125d |  | start no earlier than 2017-04-27 | Rosa R. | 96h |  |
| 681 | 4.7.8.2.4 | Scripts Prep |  | 12d | 2017-04-27 | 2017-05-12 | 679 |  |  | 115d | 5d | start no earlier than 2017-04-27 | Rosa R. | 96h |  |
| 682 | 4.7.8.2.5 | **UFT execution** |  | 10d | 2017-05-22 | 2017-06-02 | 681 |  |  | 110d |  |  | Rosa R. | 160h |  |
| 683 | 4.7.8.2.5.1 | UFT Impact testing (w/o interfaces) |  | 5d | 2017-05-22 | 2017-05-26 |  |  |  | 110d | 0d | start no earlier than 2017-05-22 | Market | 40h |  |
| 684 | 4.7.8.2.5.2 | UFT Interface testing |  | 5d | 2017-05-29 | 2017-06-02 | 683 |  |  | 110d |  |  | Market | 40h |  |
| 685 | 5 | **Market Go Live** |  | 263d | 2017-03-15 A | 2018-03-19 |  | 8% | 242.37d | 0d |  |  |  |  |  |
| 686 | 5.1 | UK/Ireland Go Live | milestone | 0d | 2017-06-12 A | 2017-06-12 A | 56FS-3d | 100% |  |  |  |  |  |  |  |
| 687 | 5.2 | UK / Ireland - End users Training (Home Office & Field) | milestone | 27d | 2017-06-08 | 2017-07-14 | 263SS |  |  | 175d |  |  |  |  |  |
| 688 | 5.3 | Nordics Go Live | milestone | 0d | 2017-08-21 | 2017-08-21 | 92 |  |  | 150d |  |  |  |  |  |
| 689 | 5.4 | Nordics - End users Training (Home Office & Field) | milestone | 5d | 2017-08-14 | 2017-08-18 | 502SS |  |  | 150d |  |  |  |  |  |
| 690 | 5.5 | France Go Live | milestone | 0d | 2017-09-18 | 2017-09-18 | 109 |  |  | 130d |  |  |  |  |  |
| 691 | 5.6 | France - End users Training (Home Office & Field) | milestone | 5d | 2017-03-15 | 2017-03-21 |  |  |  | 258d |  |  |  |  |  |
| 692 | 5.7 | Italy Go Live | milestone | 0d | 2017-09-28 | 2017-09-28 | 117FS+4d |  |  | 121d |  |  |  |  |  |
| 693 | 5.8 | Italy - End users Training (Home Office & Field) | milestone | 10d | 2017-10-09 | 2017-10-20 | 427SS |  |  | 105d |  |  |  |  |  |
| 694 | 5.9 | Benelux Go Live | milestone | 0d | 2017-06-12 A | 2017-06-12 A | 56FS-3d | 100% |  |  |  |  |  |  |  |
| 695 | 5.10 | Benelux - End users Training (Home Office & Field) | milestone | 16d | 2017-05-30 A | 2017-06-20 | 190SS | 50% | 8d | 193d |  |  |  |  |  |
| 696 | 5.11 | CHAT Go Live | milestone | 0d | 2017-09-18 | 2017-09-18 | 109 |  |  | 130d |  |  |  |  |  |
| 697 | 5.12 | CHAT - End users Training (Home Office & Field) | milestone | 5d | 2017-03-15 | 2017-03-21 |  |  |  | 258d |  |  |  |  |  |
| 698 | 5.13 | Spain Go Live | milestone | 0d | 2017-09-18 | 2017-09-18 | 109 |  |  | 130d |  |  |  |  |  |
| 699 | 5.14 | Spain - End users Training (Home Office & Field) | milestone | 6d | 2017-09-11 | 2017-09-18 | 344SS |  |  | 129d |  |  |  |  |  |
| 700 | 5.15 | Canada Go Live | milestone | 0d | 2017-10-16 | 2017-10-16 | 126 |  |  | 110d |  |  |  |  |  |
| 701 | 5.16 | Canada - End users Training (Home Office & Field) | milestone | 5d | 2017-03-15 | 2017-03-21 |  |  |  | 258d |  |  |  |  |  |
| 702 | 5.17 | Australia Go Live | milestone | 0d | 2017-10-16 | 2017-10-16 | 126 |  |  | 110d |  |  |  |  |  |
| 703 | 5.18 | Australia - End users Training (Home Office & Field) | milestone | 5d | 2017-03-15 | 2017-03-21 |  |  |  | 258d |  |  |  |  |  |
| 704 | 5.19 | Germany Go Live | milestone | 0d | 2017-10-16 | 2017-10-16 | 126 |  |  | 110d |  |  |  |  |  |
| 705 | 5.20 | Germany - End users Training (Home Office & Field) | milestone | 5d | 2017-03-15 | 2017-03-21 |  |  |  | 258d |  |  |  |  |  |
| 706 | 5.21 | Brazil Go Live | milestone | 0d | 2017-08-07 | 2017-08-07 | 101 |  |  | 160d |  |  |  |  |  |
| 707 | 5.22 | Brazil - End users Training (Home Office & Field) | milestone | 8d | 2017-08-02 | 2017-08-11 | 581SS |  |  | 155d |  |  |  |  |  |
| 708 | 5.23 | Japan Go Live | milestone | 0d | 2018-03-19 | 2018-03-19 |  |  |  | 0d |  | start no earlier than 2018-03-19 |  |  |  |
| 709 | 5.24 | Japan - End users Training (Home Office & Field) | milestone | 5d | 2017-03-15 | 2017-03-21 |  |  |  | 258d |  |  |  |  |  |

Notes:
- 682: 5/15 - 5/26
